# 08172021 Project Plan V1.0

Schedule from MS Project, 2021-06-14 to 2022-05-20, A marks actual dates.
EXL Service

## Calendars

- Standard: Mon-Fri 08:00-12:00, 13:00-17:00; Sat-Sun off.

## Resources

| Resource |
| --- |
| EXL Transitions / Ops |
| EXL Transitions / Ops / LFG |
| LFG |
| EXL Transitions / Ops / Legal |
| EXL Legal / Lincoln Legal |
| EXL |
| EXL Transitions / Ops / Legal/ LFG |
| LFG PM / LFG Ops |
| EXL Transitions |
| EXL Transitions / Ops / IT / LFG |
| EXL Transitions / EXL Ops / LFG PM / LFG Ops |
| EXL Transitions / EXL Ops |
| EXL / LFG |
| EXL Training |
| EXL Ops / IT |
| EXL Infra / IT |
| EXL Transitions / IT |
| EXL IT |
| EXL Transitions / Ops / IT |
| EXL TCOE |
| LFG Trainers |
| EXL Ops |
| EXL Quality |

## Schedule

| ID | WBS | Task | Duration | Start | Finish | Predecessors | Complete | Remaining | Total slack | Free slack | Constraint | Resources | Work | Actual work |
| --- | --- | --- | --- | --- | --- | --- | --- | --- | --- | --- | --- | --- | --- | --- |
| 1 | 1 | **Program Level Activities** | 80d? | 2021-06-14 A | 2021-10-01 |  | 40% | 48.36d? | 165d |  |  |  | 2528h | 968h |
| 2 | 1.1 | **Creation of project team** | 27d | 2021-06-14 A | 2021-07-20 A |  | 100% |  |  |  |  |  | 216h | 216h |
| 3 | 1.1.1 | Create project team and define roles and responsibilities | 27d | 2021-06-14 A | 2021-07-20 A |  | 100% |  |  |  | start no earlier than 2021-06-14 | EXL Transitions / Ops | 216h | 216h |
| 4 | 1.2 | **Kick Off** | 1d | 2021-07-21 A | 2021-07-21 A |  | 100% |  |  |  |  |  | 8h | 8h |
| 5 | 1.2.1 | Introduce project team members, present methodology and agree on high level deliverables | 1d | 2021-07-21 A | 2021-07-21 A |  | 100% |  |  |  | start no earlier than 2021-07-21 | EXL Transitions / Ops / LFG | 8h | 8h |
| 6 | 1.3 | **Program Governance Set-up** | 5d | 2021-07-22 A | 2021-07-28 A |  | 100% |  |  |  |  |  |  |  |
| 7 | 1.3.1 | Schedule weekly PMO touchase between Lincoln and EXL stakeholders | 5d | 2021-07-22 A | 2021-07-28 A | 5 | 100% |  |  |  | start no earlier than 2021-06-21 |  |  |  |
| 8 | 1.3.2 | Schedule weekly PM touchase between Project Management teams | 5d | 2021-07-22 A | 2021-07-28 A | 5 | 100% |  |  |  | start no earlier than 2021-06-21 |  |  |  |
| 9 | 1.3.3 | Schedule Bi-weekly leadership connect between both the teams | 5d | 2021-07-22 A | 2021-07-28 A | 5 | 100% |  |  |  | start no earlier than 2021-06-21 |  |  |  |
| 10 | 1.4 | **MSA Execution** | 74d | 2021-06-14 A | 2021-09-23 |  | 55% | 33.45d | 171d |  |  |  | 584h | 320h |
| 11 | 1.4.1 | Discussions between EXL and Lincoln to finalize terms | 5d | 2021-06-14 A | 2021-06-18 A |  | 100% |  |  |  | start no earlier than 2021-06-14 | EXL Transitions / Ops / LFG | 40h | 40h |
| 12 | 1.4.2 | Create and share draft MSA with Lincoln for review | 4d | 2021-06-21 A | 2021-06-24 A | 11 | 100% |  |  |  | start no earlier than 2021-06-21 | EXL Transitions / Ops / LFG | 32h | 32h |
| 13 | 1.4.3 | Lincoln to review draft MSA and share redline version with EXL | 31d | 2021-06-25 A | 2021-08-06 A | 12 | 100% |  |  |  | start no earlier than 2021-06-25 | LFG | 248h | 248h |
| 14 | 1.4.4 | EXL to review redline version and share feedback with Lincoln | 7d | 2021-08-09 | 2021-08-17 | 13 |  |  | 171d | 0d | start no earlier than 2021-07-15 | EXL Transitions / Ops / Legal | 56h |  |
| 15 | 1.4.5 | Meeting between Lincoln and EXL Legal team to finalize the MSA | 1d | 2021-08-19 | 2021-08-19 | 14FS+1d |  |  | 171d | 0d |  | EXL Legal / Lincoln Legal | 8h |  |
| 16 | 1.4.6 | Update MSA with changes disussed in the meeting | 10d | 2021-08-20 | 2021-09-02 | 15 |  |  | 171d | 0d |  | EXL | 80h |  |
| 17 | 1.4.7 | Review final version and provide sign-off | 10d | 2021-09-03 | 2021-09-16 | 16 |  |  | 171d | 0d |  | LFG | 80h |  |
| 18 | 1.4.8 | MSA Execution | 5d | 2021-09-17 | 2021-09-23 | 17 |  |  | 171d |  |  | EXL Transitions / Ops / Legal/ LFG | 40h |  |
| 19 | 1.5 | **SOW Execution** | 38d | 2021-08-09 A | 2021-09-29 |  | 13% | 33d | 167d |  |  |  | 304h | 40h |
| 20 | 1.5.1 | Create and share draft SOW with Lincoln for review | 10d | 2021-08-09 A | 2021-08-20 |  | 50% | 5d | 167d | 0d | start no earlier than 2021-08-09 | EXL Transitions / Ops / LFG | 80h | 40h |
| 21 | 1.5.2 | Lincoln to review draft SOW and share redline version with EXL | 10d | 2021-08-23 | 2021-09-03 | 20 |  |  | 167d | 0d | start no earlier than 2021-08-09 | LFG | 80h |  |
| 22 | 1.5.3 | EXL to review redline version and share feedback with Lincoln | 5d | 2021-09-06 | 2021-09-10 | 21 |  |  | 167d | 0d | start no earlier than 2021-08-09 | EXL Transitions / Ops / Legal | 40h |  |
| 23 | 1.5.4 | Meeting between Lincoln and EXL to finalize the SOW | 1d | 2021-09-13 | 2021-09-13 | 22 |  |  | 167d | 0d | start no earlier than 2021-08-11 | EXL Legal / Lincoln Legal | 8h |  |
| 24 | 1.5.5 | Update SOW with changes disussed in the meeting | 5d | 2021-09-14 | 2021-09-20 | 23 |  |  | 167d | 0d | start no earlier than 2021-08-12 | EXL | 40h |  |
| 25 | 1.5.6 | Review final version and provide sign-off | 3d | 2021-09-21 | 2021-09-23 | 24 |  |  | 167d | 0d | start no earlier than 2021-08-13 | LFG | 24h |  |
| 26 | 1.5.7 | SOW Execution | 4d | 2021-09-24 | 2021-09-29 | 25 |  |  | 167d |  | start no earlier than 2021-08-18 | EXL Transitions / Ops / Legal/ LFG | 32h |  |

| ID | WBS | Task | Duration | Start | Finish | Predecessors | Complete | Remaining | Total slack | Free slack | Constraint | Resources | Work | Actual work |
| --- | --- | --- | --- | --- | --- | --- | --- | --- | --- | --- | --- | --- | --- | --- |
| 27 | 1.6 | **Technology and Infrastructure Diagnostic** | 41d? | 2021-08-06 A | 2021-10-01 |  | 9% | 37.46d? | 165d |  |  |  | 600h | 48h |
| 28 | 1.6.1 | Kick-off meeting between Lincoln and EXL Tech teams | 1d? | 2021-08-06 A | 2021-08-06 A |  | 100% |  |  |  | start no earlier than 2021-08-06 |  |  |  |
| 29 | 1.6.2 | Conduct detailed requirement analysis | 20d | 2021-08-09 A | 2021-09-03 | 28 | 10% | 18d | 185d |  | start no earlier than 2021-08-06 | EXL Transitions | 160h | 16h |
| 30 | 1.6.3 | Identify specific hardware requirements | 20d | 2021-08-09 A | 2021-09-03 | 28 | 10% | 18d | 185d |  | start no earlier than 2021-08-09 | EXL Transitions / Ops / IT / LFG | 160h | 16h |
| 31 | 1.6.4 | Identify data security and storage requirements | 20d | 2021-08-09 A | 2021-09-03 | 28 | 10% | 18d | 165d | 0d | start no earlier than 2021-08-09 | EXL Transitions / Ops / IT / LFG | 160h | 16h |
| 32 | 1.6.5 | Establish telecom and technology solution , including bandwidth | 15d | 2021-09-06 | 2021-09-24 | 31 |  |  | 165d | 0d | start no earlier than 2021-08-16 | EXL Transitions / Ops / IT / LFG | 120h |  |
| 33 | 1.6.6 | Conduct User Acceptance Testing (UAT) | 5d | 2021-09-27 | 2021-10-01 | 32 |  |  | 165d |  |  |  |  |  |
| 34 | 1.7 | **Prep - Design Validation and Planning** | 20d | 2021-07-26 A | 2021-08-20 |  | 75% | 5.08d | 195d |  |  |  | 424h | 336h |
| 35 | 1.7.1 | **Process Discovery Questionnaire** | 20d | 2021-07-26 A | 2021-08-20 |  | 71% | 5.71d | 195d |  |  |  | 200h | 160h |
| 36 | 1.7.1.1 | Update with information already available and share with Lincoln | 5d | 2021-07-26 A | 2021-07-30 A |  | 100% |  |  |  | start no earlier than 2021-07-26 | EXL Transitions / Ops | 40h | 40h |
| 37 | 1.7.1.2 | Review PDQ and share updated PDQ with EXL | 10d | 2021-07-26 A | 2021-08-06 A | 36 | 100% |  |  |  | start no earlier than 2021-07-26 | LFG PM / LFG Ops | 80h | 80h |
| 38 | 1.7.1.3 | Review responses and send clarification questions to Lincoln | 5d | 2021-08-09 A | 2021-08-13 A | 37 | 100% |  |  |  |  |  |  |  |
| 39 | 1.7.1.4 | Provide responses to clarifications received from EXL | 5d | 2021-08-16 | 2021-08-20 | 38 |  |  | 195d |  |  |  |  |  |
| 40 | 1.7.1.5 | Provide historical process data points (volume, SLA performance etc.) to EXL | 5d | 2021-08-16 | 2021-08-20 | 38 |  |  | 195d |  | start no earlier than 2021-07-26 | LFG PM / LFG Ops | 40h |  |
| 41 | 1.7.1.6 | Provide process documentation (SOPs) to EXL | 5d | 2021-08-16 A | 2021-08-20 A | 38 | 100% |  |  |  |  | LFG PM / LFG Ops | 40h | 40h |
| 42 | 1.7.2 | **Schedule** | 7d | 2021-08-02 A | 2021-08-10 A |  | 100% |  |  |  |  |  | 56h | 56h |
| 43 | 1.7.2.1 | Create and share Due Diligence schedule and agenda with Lincoln | 5d | 2021-08-02 A | 2021-08-06 A |  | 100% |  |  |  | start no earlier than 2021-08-02 | EXL Transitions / Ops | 40h | 40h |
| 44 | 1.7.2.2 | Discuss agenda and agree on timelines | 2d | 2021-08-09 A | 2021-08-10 A |  | 100% |  |  |  | start no earlier than 2021-08-09 | EXL Transitions / Ops / LFG | 16h | 16h |
| 45 | 1.7.3 | **Readiness** | 20d | 2021-07-26 A | 2021-08-20 |  | 71% | 5.71d |  |  |  |  | 168h | 120h |
| 46 | 1.7.3.1 | Completion of BGC for the team participating in Validation sessions | 15d | 2021-07-26 A | 2021-08-13 A |  | 100% |  |  |  | start no earlier than 2021-07-26 | EXL Transitions / Ops | 120h | 120h |
| 47 | 1.7.3.2 | Lincoln IDs creation for EXL Team Members | 5d | 2021-08-13 | 2021-08-19 |  |  |  | 195d | 0d | finish no earlier than 2021-08-19 | LFG | 40h |  |
| 48 | 1.7.3.3 | UAT of Lincoln applications and Hardware testing | 1d | 2021-08-20 | 2021-08-20 | 47 |  |  | 195d |  | start no earlier than 2021-08-20 | EXL Transitions / Ops | 8h |  |
| 49 | 1.8 | **Conduct Design Validation and Planning Study** | 30d? | 2021-08-23 | 2021-10-01 |  |  |  | 165d |  |  |  | 392h |  |
| 50 | 1.8.1 | **Annuities Operations - Money Out** | 5d? | 2021-08-23 | 2021-08-27 |  |  |  | 190d |  |  |  | 72h |  |
| 51 | 1.8.1.1 | Introduction Meeting | 1d? | 2021-08-23 | 2021-08-23 |  |  |  | 194d |  | start no earlier than 2021-08-23 | EXL Transitions / EXL Ops / LFG PM / LFG Ops | 8h |  |
| 52 | 1.8.1.2 | Process Demo for in-scope worktypes | 2d | 2021-08-23 | 2021-08-24 |  |  |  | 193d |  | start no earlier than 2021-08-23 | EXL Transitions / EXL Ops / LFG PM / LFG Ops | 16h |  |
| 53 | 1.8.1.3 | Performance Service Levels | 1d? | 2021-08-24 | 2021-08-24 |  |  |  | 193d |  | start no earlier than 2021-08-24 | EXL Transitions / EXL Ops / LFG PM / LFG Ops | 8h |  |
| 54 | 1.8.1.4 | Quality Framework | 1d? | 2021-08-25 | 2021-08-25 |  |  |  | 192d |  | start no earlier than 2021-08-25 | EXL Transitions / EXL Ops / LFG PM / LFG Ops | 8h |  |
| 55 | 1.8.1.5 | Reporting | 1d? | 2021-08-26 | 2021-08-26 |  |  |  | 191d |  | start no earlier than 2021-08-26 | EXL Transitions / EXL Ops / LFG PM / LFG Ops | 8h |  |
| 56 | 1.8.1.6 | Work Allocation and Queue Management | 1d? | 2021-08-26 | 2021-08-26 |  |  |  | 191d |  | start no earlier than 2021-08-26 | EXL Transitions / EXL Ops / LFG PM / LFG Ops | 8h |  |
| 57 | 1.8.1.7 | Training Framework | 1d? | 2021-08-27 | 2021-08-27 |  |  |  | 190d |  | start no earlier than 2021-08-27 | EXL Transitions / EXL Ops / LFG PM / LFG Ops | 8h |  |
| 58 | 1.8.1.8 | Technology Requirements | 1d? | 2021-08-27 | 2021-08-27 |  |  |  | 190d |  | start no earlier than 2021-08-27 | EXL Transitions / EXL Ops / LFG PM / LFG Ops | 8h |  |

| ID | WBS | Task | Duration | Start | Finish | Total slack | Constraint | Resources | Work |
| --- | --- | --- | --- | --- | --- | --- | --- | --- | --- |
| 59 | 1.8.2 | **Life Operations - Non Financial Processing + Secondary Address** | 5d? | 2021-08-30 | 2021-09-03 | 185d |  |  | 72h |
| 60 | 1.8.2.1 | Introduction Meeting | 1d? | 2021-08-30 | 2021-08-30 | 189d | start no earlier than 2021-08-30 | EXL Transitions / EXL Ops / LFG PM / LFG Ops | 8h |
| 61 | 1.8.2.2 | Process Demo for in-scope worktypes | 2d | 2021-08-30 | 2021-08-31 | 188d | start no earlier than 2021-08-30 | EXL Transitions / EXL Ops / LFG PM / LFG Ops | 16h |
| 62 | 1.8.2.3 | Performance Service Levels | 1d? | 2021-08-31 | 2021-08-31 | 188d | start no earlier than 2021-08-31 | EXL Transitions / EXL Ops / LFG PM / LFG Ops | 8h |
| 63 | 1.8.2.4 | Quality Framework | 1d? | 2021-09-01 | 2021-09-01 | 187d | start no earlier than 2021-09-01 | EXL Transitions / EXL Ops / LFG PM / LFG Ops | 8h |
| 64 | 1.8.2.5 | Reporting | 1d? | 2021-09-02 | 2021-09-02 | 186d | start no earlier than 2021-09-02 | EXL Transitions / EXL Ops / LFG PM / LFG Ops | 8h |
| 65 | 1.8.2.6 | Work Allocation and Queue Management | 1d? | 2021-09-02 | 2021-09-02 | 186d | start no earlier than 2021-09-02 | EXL Transitions / EXL Ops / LFG PM / LFG Ops | 8h |
| 66 | 1.8.2.7 | Training Framework | 1d? | 2021-09-03 | 2021-09-03 | 185d | start no earlier than 2021-09-03 | EXL Transitions / EXL Ops / LFG PM / LFG Ops | 8h |
| 67 | 1.8.2.8 | Technology Requirements | 1d? | 2021-09-03 | 2021-09-03 | 185d | start no earlier than 2021-09-03 | EXL Transitions / EXL Ops / LFG PM / LFG Ops | 8h |
| 68 | 1.8.3 | **Annuities Operations - Non Financial Processing** | 4d? | 2021-09-07 | 2021-09-10 | 180d |  |  | 72h |
| 69 | 1.8.3.1 | Introduction Meeting | 1d? | 2021-09-07 | 2021-09-07 | 183d | start no earlier than 2021-09-07 | EXL Transitions / EXL Ops / LFG PM / LFG Ops | 8h |
| 70 | 1.8.3.2 | Process Demo for in-scope worktypes | 2d | 2021-09-07 | 2021-09-08 | 182d | start no earlier than 2021-09-07 | EXL Transitions / EXL Ops / LFG PM / LFG Ops | 16h |
| 71 | 1.8.3.3 | Performance Service Levels | 1d? | 2021-09-08 | 2021-09-08 | 182d | start no earlier than 2021-09-08 | EXL Transitions / EXL Ops / LFG PM / LFG Ops | 8h |
| 72 | 1.8.3.4 | Quality Framework | 1d? | 2021-09-09 | 2021-09-09 | 181d | start no earlier than 2021-09-09 | EXL Transitions / EXL Ops / LFG PM / LFG Ops | 8h |
| 73 | 1.8.3.5 | Reporting | 1d? | 2021-09-10 | 2021-09-10 | 180d | start no earlier than 2021-09-10 | EXL Transitions / EXL Ops / LFG PM / LFG Ops | 8h |
| 74 | 1.8.3.6 | Work Allocation and Queue Management | 1d? | 2021-09-10 | 2021-09-10 | 180d | start no earlier than 2021-09-10 | EXL Transitions / EXL Ops / LFG PM / LFG Ops | 8h |
| 75 | 1.8.3.7 | Training Framework | 1d? | 2021-09-10 | 2021-09-10 | 180d | start no earlier than 2021-09-10 | EXL Transitions / EXL Ops / LFG PM / LFG Ops | 8h |
| 76 | 1.8.3.8 | Technology Requirements | 1d? | 2021-09-10 | 2021-09-10 | 180d | start no earlier than 2021-09-10 | EXL Transitions / EXL Ops / LFG PM / LFG Ops | 8h |
| 77 | 1.8.4 | **Annuities Operations - Transfer Status and NIGOs** | 5d? | 2021-09-13 | 2021-09-17 | 175d |  |  | 72h |
| 78 | 1.8.4.1 | Introduction Meeting | 1d | 2021-09-13 | 2021-09-13 | 179d | start no earlier than 2021-09-13 | EXL Transitions / EXL Ops / LFG PM / LFG Ops | 8h |
| 79 | 1.8.4.2 | Process Demo for in-scope worktypes | 2d | 2021-09-13 | 2021-09-14 | 178d | start no earlier than 2021-09-13 | EXL Transitions / EXL Ops / LFG PM / LFG Ops | 16h |
| 80 | 1.8.4.3 | Performance Service Levels | 1d | 2021-09-14 | 2021-09-14 | 178d | start no earlier than 2021-09-14 | EXL Transitions / EXL Ops / LFG PM / LFG Ops | 8h |
| 81 | 1.8.4.4 | Quality Framework | 1d | 2021-09-15 | 2021-09-15 | 177d | start no earlier than 2021-09-15 | EXL Transitions / EXL Ops / LFG PM / LFG Ops | 8h |
| 82 | 1.8.4.5 | Reporting | 1d | 2021-09-16 | 2021-09-16 | 176d | start no earlier than 2021-09-16 | EXL Transitions / EXL Ops / LFG PM / LFG Ops | 8h |
| 83 | 1.8.4.6 | Work Allocation and Queue Management | 1d | 2021-09-16 | 2021-09-16 | 176d | start no earlier than 2021-09-16 | EXL Transitions / EXL Ops / LFG PM / LFG Ops | 8h |
| 84 | 1.8.4.7 | Training Framework | 1d | 2021-09-17 | 2021-09-17 | 175d | start no earlier than 2021-09-17 | EXL Transitions / EXL Ops / LFG PM / LFG Ops | 8h |
| 85 | 1.8.4.8 | Technology Requirements | 1d? | 2021-09-17 | 2021-09-17 | 175d | start no earlier than 2021-09-17 | EXL Transitions / EXL Ops / LFG PM / LFG Ops | 8h |

| ID | WBS | Task | Duration | Start | Finish | Complete | Remaining | Total slack | Constraint | Resources | Work | Actual work |
| --- | --- | --- | --- | --- | --- | --- | --- | --- | --- | --- | --- | --- |
| 86 | 1.8.5 | **Life Operations - Return Mail** | 5d? | 2021-09-13 | 2021-09-17 |  |  | 175d |  |  | 72h |  |
| 87 | 1.8.5.1 | Introduction Meeting | 1d? | 2021-09-13 | 2021-09-13 |  |  | 179d | start no earlier than 2021-09-13 | EXL Transitions / EXL Ops / LFG PM / LFG Ops | 8h |  |
| 88 | 1.8.5.2 | Process Demo for in-scope worktypes | 2d | 2021-09-13 | 2021-09-14 |  |  | 178d | start no earlier than 2021-09-13 | EXL Transitions / EXL Ops / LFG PM / LFG Ops | 16h |  |
| 89 | 1.8.5.3 | Performance Service Levels | 1d? | 2021-09-14 | 2021-09-14 |  |  | 178d | start no earlier than 2021-09-14 | EXL Transitions / EXL Ops / LFG PM / LFG Ops | 8h |  |
| 90 | 1.8.5.4 | Quality Framework | 1d? | 2021-09-15 | 2021-09-15 |  |  | 177d | start no earlier than 2021-09-15 | EXL Transitions / EXL Ops / LFG PM / LFG Ops | 8h |  |
| 91 | 1.8.5.5 | Reporting | 1d? | 2021-09-16 | 2021-09-16 |  |  | 176d | start no earlier than 2021-09-16 | EXL Transitions / EXL Ops / LFG PM / LFG Ops | 8h |  |
| 92 | 1.8.5.6 | Work Allocation and Queue Management | 1d? | 2021-09-16 | 2021-09-16 |  |  | 176d | start no earlier than 2021-09-16 | EXL Transitions / EXL Ops / LFG PM / LFG Ops | 8h |  |
| 93 | 1.8.5.7 | Training Framework | 1d? | 2021-09-17 | 2021-09-17 |  |  | 175d | start no earlier than 2021-09-17 | EXL Transitions / EXL Ops / LFG PM / LFG Ops | 8h |  |
| 94 | 1.8.5.8 | Technology Requirements | 1d? | 2021-09-17 | 2021-09-17 |  |  | 175d | start no earlier than 2021-09-17 | EXL Transitions / EXL Ops / LFG PM / LFG Ops | 8h |  |
| 95 | 1.8.6 | **Data Consolidation** | 6d | 2021-09-20 | 2021-09-27 |  |  | 169d |  |  |  |  |
| 96 | 1.8.6.1 | Consolidation of all findings during validation session | 6d | 2021-09-20 | 2021-09-27 |  |  | 169d | start no earlier than 2021-09-20 |  |  |  |
| 97 | 1.8.6.2 | Analysis of data points | 6d | 2021-09-20 | 2021-09-27 |  |  | 169d | start no earlier than 2021-09-20 |  |  |  |
| 98 | 1.8.7 | **Design Validation and Planning Report out** | 4d? | 2021-09-28 | 2021-10-01 |  |  | 165d |  |  | 32h |  |
| 99 | 1.8.7.1 | EXL internal ops. review of report | 1d? | 2021-09-28 | 2021-09-28 |  |  | 168d | start no earlier than 2021-09-28 | EXL Transitions / EXL Ops | 8h |  |
| 100 | 1.8.7.2 | Internal Engagement Manager Review of DD report | 1d? | 2021-09-29 | 2021-09-29 |  |  | 167d | start no earlier than 2021-09-29 | EXL Transitions / EXL Ops | 8h |  |
| 101 | 1.8.7.3 | External - Review of report with Lincoln PMO team | 1d? | 2021-09-30 | 2021-09-30 |  |  | 166d | start no earlier than 2021-09-30 | EXL Transitions / EXL Ops / LFG PM / LFG Ops | 8h |  |
| 102 | 1.8.7.4 | Final DD report out and tollgate review | 1d? | 2021-10-01 | 2021-10-01 |  |  | 165d | start no earlier than 2021-10-01 | EXL / LFG | 8h |  |
| 103 | 2 | **Transition** | 220d | 2021-07-19 A | 2022-05-20 | 2% | 216.46d | 0d |  |  | 27992h | 464h |
| 104 | 2.1 | **Annuities Operations - Money Out** | 220d | 2021-07-19 A | 2022-05-20 | 6% | 207.32d | 0d |  |  | 7728h | 464h |
| 105 | 2.1.1 | **Hiring & Onboarding** | 51d | 2021-07-19 A | 2021-09-27 | 24% | 38.72d | 169d |  |  | 864h | 208h |
| 106 | 2.1.1.1 | Finalize seeding strategy/hiring requirement | 5d | 2021-07-19 A | 2021-07-23 A | 100% |  |  | finish no earlier than 2021-07-23 | EXL Transitions / Ops | 40h | 40h |
| 107 | 2.1.1.2 | Approval from EXL Operations on finalized resources | 5d | 2021-07-19 A | 2021-07-23 A | 100% |  |  | finish no earlier than 2021-07-23 | EXL Transitions / Ops | 40h | 40h |
| 108 | 2.1.1.3 | Roll out SRF/ IJP to initiate hiring | 1d | 2021-07-29 A | 2021-07-29 A | 100% |  |  | start no earlier than 2021-07-29 | EXL Transitions / Ops | 8h | 8h |
| 109 | 2.1.1.4 | Define back ground checks process | 15d | 2021-07-19 A | 2021-08-06 A | 100% |  |  | finish no earlier than 2021-08-06 | EXL Transitions / Ops | 120h | 120h |
| 110 | 2.1.1.5 | Hire/Seed & Rollout offer to selected candidates | 27d | 2021-07-19 | 2021-08-24 |  |  | 193d | finish no earlier than 2021-08-24 | EXL Transitions / Ops | 216h |  |
| 111 | 2.1.1.6 | Hire/Seed QCAs and Trainers | 27d | 2021-07-19 | 2021-08-24 |  |  | 193d | finish no earlier than 2021-08-24 | EXL Transitions / Ops | 216h |  |
| 112 | 2.1.1.7 | Conduct BGC for new hires/obtain BGC for internal seeded | 25d | 2021-08-24 | 2021-09-27 |  |  | 169d | start no earlier than 2021-08-24 | EXL Transitions / Ops | 200h |  |
| 113 | 2.1.1.8 | Conduct induction and orientation, Initiate employee ID generation | 3d | 2021-08-24 | 2021-08-26 |  |  | 191d | finish no earlier than 2021-08-26 | EXL Training | 24h |  |

| ID | WBS | Task | Duration | Start | Finish | Predecessors | Complete | Remaining | Total slack | Free slack | Constraint | Resources | Work | Actual work |
| --- | --- | --- | --- | --- | --- | --- | --- | --- | --- | --- | --- | --- | --- | --- |
| 114 | 2.1.2 | **Infrastructure Setup** | 12d | 2021-07-19 A | 2021-08-03 A |  | 100% |  |  |  |  |  | 96h | 96h |
| 115 | 2.1.2.1 | Confirm seat availability at delivery location/WFH | 10d | 2021-07-19 A | 2021-07-30 A |  | 100% |  |  |  | finish no earlier than 2021-07-30 | EXL Ops / IT | 80h | 80h |
| 116 | 2.1.2.2 | Raise request on CRE to block seats | 2d | 2021-08-02 A | 2021-08-03 A | 115 | 100% |  |  |  |  | EXL Ops / IT | 16h | 16h |
| 117 | 2.1.3 | **Technology Setup** | 35d | 2021-07-19 A | 2021-09-03 |  | 57% | 15d | 165d |  |  |  | 280h | 160h |
| 118 | 2.1.3.1 | Raise MRS for hardware, if required | 5d | 2021-07-19 A | 2021-07-23 A |  | 100% |  |  |  | finish no earlier than 2021-07-23 | EXL Transitions / IT | 40h | 40h |
| 119 | 2.1.3.2 | Procurement of hardware, if required | 15d | 2021-07-26 A | 2021-08-13 A | 118 | 100% |  |  |  |  | EXL IT | 120h | 120h |
| 120 | 2.1.3.3 | Procure, install and test all required hardware | 10d | 2021-08-16 | 2021-08-27 | 119 |  |  | 165d | 0d |  | EXL IT | 80h |  |
| 121 | 2.1.3.4 | Confirm connectivity/accesses - UAT | 5d | 2021-08-30 | 2021-09-03 | 120 |  |  | 165d | 20d |  | EXL Transitions / Ops / IT | 40h |  |
| 122 | 2.1.4 | **Lincoln System/Access setup** | 30d | 2021-08-23 | 2021-10-01 |  |  |  | 165d |  |  |  | 240h |  |
| 123 | 2.1.4.1 | Mapping of Lincoln system accesses required | 20d | 2021-08-23 | 2021-09-17 |  |  |  | 165d | 0d | start no earlier than 2021-08-23 | EXL Transitions / Ops / IT | 160h |  |
| 124 | 2.1.4.2 | Finalization of accesses required for selected EXL resources | 2d | 2021-09-20 | 2021-09-21 | 123 |  |  | 165d | 0d |  | EXL Transitions / Ops / IT | 16h |  |
| 125 | 2.1.4.3 | Send a list of requisites to LFG | 1d | 2021-09-22 | 2021-09-22 | 124 |  |  | 165d | 0d |  | EXL Transitions / Ops / IT | 8h |  |
| 126 | 2.1.4.4 | LFG to provide required accesses and confirm | 5d | 2021-09-23 | 2021-09-29 | 125 |  |  | 165d | 0d |  | LFG | 40h |  |
| 127 | 2.1.4.5 | EXL to validate accesses and confirm | 2d | 2021-09-30 | 2021-10-01 | 126 |  |  | 165d |  |  | EXL Transitions / Ops / IT | 16h |  |
| 128 | 2.1.5 | **Knowledge Transfer and Documentation** | 45d | 2021-08-30 | 2021-10-29 |  |  |  | 145d |  |  |  | 1112h |  |
| 129 | 2.1.5.1 | **Planning** | 25d | 2021-08-30 | 2021-10-01 |  |  |  | 165d |  |  |  | 280h |  |
| 130 | 2.1.5.1.1 | Conduct Preprocess training, if applicable | 10d | 2021-08-30 | 2021-09-10 |  |  |  | 180d |  | start no earlier than 2021-08-30 | EXL Training | 80h |  |
| 131 | 2.1.5.1.2 | Determine KT strategy and Trainer details | 15d | 2021-08-30 | 2021-09-17 |  |  |  | 165d | 0d | start no earlier than 2021-08-30 | EXL Transitions | 120h |  |
| 132 | 2.1.5.1.3 | Obtain training plan/schedule from LFG | 5d | 2021-09-20 | 2021-09-24 | 131 |  |  | 165d | 0d |  | EXL Transitions | 40h |  |
| 133 | 2.1.5.1.4 | Share Trainees details with LFG | 3d | 2021-09-27 | 2021-09-29 | 132 |  |  | 165d | 0d |  | EXL Transitions / Ops | 24h |  |
| 134 | 2.1.5.1.5 | LFG trainer to setup meeting with trainees for remote training | 2d | 2021-09-30 | 2021-10-01 | 133 |  |  | 165d |  |  | LFG | 16h |  |
| 135 | 2.1.5.2 | **Conduct Process Training Go / No-Go Tollgate** | 2d | 2021-09-30 | 2021-10-01 |  |  |  | 165d |  |  |  | 16h |  |
| 136 | 2.1.5.2.1 | Conduct Process Training Go / No-Go (TCoE Review) | 1d | 2021-09-30 | 2021-09-30 |  |  |  | 166d |  | start no earlier than 2021-09-30 | EXL TCOE | 8h |  |
| 137 | 2.1.5.2.2 | Conduct Process Training Go / No-Go (Internal and External stakeholders) | 1d | 2021-10-01 | 2021-10-01 |  |  |  | 165d |  | start no earlier than 2021-10-01 | EXL / LFG | 8h |  |

| ID | WBS | Task | Duration | Start | Finish | Predecessors | Total slack | Free slack | Constraint | Resources | Work |
| --- | --- | --- | --- | --- | --- | --- | --- | --- | --- | --- | --- |
| 138 | 2.1.5.3 | **Process Training** | 20d | 2021-10-04 | 2021-10-29 |  | 145d |  |  |  | 816h |
| 139 | 2.1.5.3.1 | Conduct training as per the approved plan | 20d | 2021-10-04 | 2021-10-29 | 121 | 145d | 0d | start no earlier than 2021-10-04 | LFG Trainers | 160h |
| 140 | 2.1.5.3.2 | Conduct periodic assessment and quizzes | 20d | 2021-10-04 | 2021-10-29 | 139SS | 145d |  | finish no earlier than 2021-10-29 | LFG Trainers | 160h |
| 141 | 2.1.5.3.3 | Calibrate and monitor KT effectiveness with LFG | 20d | 2021-10-04 | 2021-10-29 | 139SS | 145d |  | finish no earlier than 2021-10-29 | EXL / LFG | 160h |
| 142 | 2.1.5.3.4 | Update process documentation if required | 20d | 2021-10-04 | 2021-10-29 | 139SS | 145d |  | finish no earlier than 2021-10-29 | EXL / LFG | 160h |
| 143 | 2.1.5.3.5 | Provide sufficient practice on ‘Live’ cases before certification | 20d | 2021-10-04 | 2021-10-29 | 139SS | 145d |  | finish no earlier than 2021-10-29 | LFG Trainers | 160h |
| 144 | 2.1.5.3.6 | Conduct final assessments and Certification | 1d | 2021-10-29 | 2021-10-29 |  | 145d |  | start no earlier than 2021-10-29 | LFG Trainers | 8h |
| 145 | 2.1.5.3.7 | Go-live readiness Assessment | 1d | 2021-10-29 | 2021-10-29 |  | 145d |  | start no earlier than 2021-10-29 | LFG Trainers | 8h |
| 146 | 2.1.6 | **Ramp** | 50d | 2021-10-18 | 2021-12-24 |  | 105d |  |  |  | 2560h |
| 147 | 2.1.6.1 | **Conduct Ramp Go / No-Go Tollgate** | 41d | 2021-10-29 | 2021-12-24 |  | 105d |  |  |  | 360h |
| 148 | 2.1.6.1.1 | Conduct Ramp Go / No-Go (TCoE Review) | 2d | 2021-10-29 | 2021-11-01 |  | 144d |  | start no earlier than 2021-10-29 | EXL Transitions | 16h |
| 149 | 2.1.6.1.2 | Conduct Ramp Go / No-Go (Internal and External stakeholders) | 2d | 2021-10-29 | 2021-11-01 |  | 144d |  | finish no earlier than 2021-11-01 | EXL / LFG | 16h |
| 150 | 2.1.6.1.3 | Go Live/Parallel Run | 1d | 2021-11-01 | 2021-11-01 |  | 144d |  | start no earlier than 2021-11-01 | EXL / LFG | 8h |
| 151 | 2.1.6.1.4 | Execute volume ramp as per plan | 40d | 2021-11-01 | 2021-12-24 |  | 105d | 0d | start no earlier than 2021-11-01 | EXL / LFG | 320h |
| 152 | 2.1.6.2 | **KT & Process Management** | 50d | 2021-10-18 | 2021-12-24 |  | 105d |  |  |  | 280h |
| 153 | 2.1.6.2.1 | Creation of P4P structure to be implemented from Ramp | 5d | 2021-10-18 | 2021-10-22 |  | 150d |  | start no earlier than 2021-10-18 | EXL Ops | 40h |
| 154 | 2.1.6.2.2 | Identify QA strategy | 10d | 2021-12-13 | 2021-12-24 | 151FS-10d | 105d | 0d | start no earlier than 2021-10-18 | LFG | 80h |
| 155 | 2.1.6.2.3 | Identify QA resource and certification criteria | 10d | 2021-12-13 | 2021-12-24 | 154SS | 105d |  | start no earlier than 2021-10-18 | EXL / LFG | 80h |
| 156 | 2.1.6.2.4 | Agree on Ramp Success Criteria | 10d | 2021-12-13 | 2021-12-24 | 154SS | 105d |  | start no earlier than 2021-10-18 | EXL / LFG | 80h |
| 157 | 2.1.6.3 | **Project Governance** | 40d | 2021-11-01 | 2021-12-24 |  | 105d |  |  |  | 640h |
| 158 | 2.1.6.3.1 | Weekly / Monthly Ramp performance review meetings setup | 40d | 2021-11-01 | 2021-12-24 | 151SS | 105d |  | start no earlier than 2021-11-01 | EXL Transitions | 320h |
| 159 | 2.1.6.3.2 | Raid Log updation | 40d | 2021-11-01 | 2021-12-24 | 151SS | 105d |  | finish no earlier than 2021-12-24 | EXL Transitions | 320h |
| 160 | 2.1.6.4 | **Performance Reporting** | 40d | 2021-11-01 | 2021-12-24 |  | 105d |  |  |  | 1280h |
| 161 | 2.1.6.4.1 | Monitor Ramp performance | 40d | 2021-11-01 | 2021-12-24 | 151SS | 105d |  | finish no earlier than 2021-12-24 | EXL Transitions / Ops | 320h |
| 162 | 2.1.6.4.2 | Report Ramp performance | 40d | 2021-11-01 | 2021-12-24 | 151SS | 105d |  | finish no earlier than 2021-12-24 | EXL Transitions / Ops | 320h |
| 163 | 2.1.6.4.3 | Conduct Ramp Performance Review meetings | 40d | 2021-11-01 | 2021-12-24 | 151SS | 105d |  | finish no earlier than 2021-12-24 | EXL Transitions | 320h |
| 164 | 2.1.6.4.4 | Follow Quality audit plan for Ramp | 40d | 2021-11-01 | 2021-12-24 | 151SS | 105d |  | finish no earlier than 2021-12-24 | LFG | 320h |
| 165 | 2.1.6.4.5 | Conduct Quality calibration, Variance and feedback reports | 40d | 2021-11-01 | 2021-12-24 | 151SS | 105d |  | finish no earlier than 2021-12-24 |  |  |

| ID | WBS | Task | Duration | Start | Finish | Predecessors | Total slack | Free slack | Constraint | Resources | Work |
| --- | --- | --- | --- | --- | --- | --- | --- | --- | --- | --- | --- |
| 166 | 2.1.7 | **Steady State** | 120d | 2021-12-06 | 2022-05-20 |  | 0d |  |  |  | 2576h |
| 167 | 2.1.7.1 | **Refine Hiring & Seeding Strategy** | 15d | 2021-12-06 | 2021-12-24 |  | 105d |  |  |  | 280h |
| 168 | 2.1.7.1.1 | Refine Seeding/Hiring strategy, if required & update JD | 15d | 2021-12-06 | 2021-12-24 | 151FS-15d | 105d | 0d | finish no earlier than 2021-12-17 | EXL Transitions / Ops | 120h |
| 169 | 2.1.7.1.2 | Update Org chart, as required | 15d | 2021-12-06 | 2021-12-24 | 168SS | 105d |  | start no earlier than 2021-11-08 | EXL Ops | 120h |
| 170 | 2.1.7.1.3 | Share and obtain sign off from LFG on revisions in approach | 5d | 2021-12-20 | 2021-12-24 |  | 105d |  | start no earlier than 2021-12-20 | EXL Transitions / Ops | 40h |
| 171 | 2.1.7.2 | **Refine Refine KT Strategy** | 15d | 2021-12-06 | 2021-12-24 |  | 105d |  |  |  | 720h |
| 172 | 2.1.7.2.1 | Revalidate training approach & modify, as required | 15d | 2021-12-06 | 2021-12-24 | 168SS | 105d |  | start no earlier than 2021-11-01 | EXL | 120h |
| 173 | 2.1.7.2.2 | Create / modify training plan | 15d | 2021-12-06 | 2021-12-24 | 168SS | 105d |  | finish no earlier than 2021-11-26 | EXL | 120h |
| 174 | 2.1.7.2.3 | Create / modify curriculum | 15d | 2021-12-06 | 2021-12-24 | 168SS | 105d |  | finish no earlier than 2021-11-26 | EXL | 120h |
| 175 | 2.1.7.2.4 | Create / modify Training manual and DTP | 15d | 2021-12-06 | 2021-12-24 | 168SS | 105d |  | finish no earlier than 2021-11-26 | EXL / LFG | 120h |
| 176 | 2.1.7.2.5 | Create/ modify assessment criterion | 15d | 2021-12-06 | 2021-12-24 | 168SS | 105d |  | finish no earlier than 2021-11-26 | EXL / LFG | 120h |
| 177 | 2.1.7.2.6 | Share the new strategy with client | 15d | 2021-12-06 | 2021-12-24 | 168SS | 105d |  |  | EXL | 120h |
| 178 | 2.1.7.3 | **Process Management & Documentation** | 15d | 2021-12-06 | 2021-12-24 |  | 105d |  |  |  | 240h |
| 179 | 2.1.7.3.1 | Creation of FMEA and shared with stakeholders | 15d | 2021-12-06 | 2021-12-24 | 168SS | 105d |  | start no earlier than 2021-12-06 | EXL Quality | 120h |
| 180 | 2.1.7.3.2 | Coordinate with Compliance to create OSD | 15d | 2021-12-06 | 2021-12-24 | 168SS | 105d |  | start no earlier than 2021-12-06 | EXL Transitions | 120h |
| 181 | 2.1.7.4 | **SLA Performance & Gap Analysis** | 105d | 2021-12-27 | 2022-05-20 |  | 0d |  |  |  | 960h |
| 182 | 2.1.7.4.1 | Evaluate pilot performance | 5d | 2021-12-27 | 2021-12-31 |  | 0d |  | start no earlier than 2021-12-27 | EXL / LFG | 40h |
| 183 | 2.1.7.4.2 | Identify the gap between historical and current performance | 5d | 2021-12-27 | 2021-12-31 | 182SS | 100d |  | start no earlier than 2021-12-27 | EXL / LFG | 40h |
| 184 | 2.1.7.4.3 | Determine bottlenecks | 5d | 2021-12-27 | 2021-12-31 | 182SS | 0d |  | start no earlier than 2021-12-27 | EXL / LFG | 40h |
| 185 | 2.1.7.4.4 | Validate SLA sustainability at BAU | 90d | 2022-01-03 | 2022-05-06 | 184 | 0d |  | finish no earlier than 2021-12-10 | EXL / LFG | 720h |
| 186 | 2.1.7.4.5 | Initiate changes (if any) through change control | 10d | 2022-05-09 | 2022-05-20 | 185 | 0d |  |  | EXL | 80h |
| 187 | 2.1.7.4.6 | Create structure for data baseline | 5d | 2021-12-27 | 2021-12-31 | 182SS | 100d |  | start no earlier than 2021-12-20 | EXL / LFG | 40h |
| 188 | 2.1.7.5 | **Project Governance** | 5d | 2021-12-20 | 2021-12-24 |  | 105d |  |  |  | 80h |
| 189 | 2.1.7.5.1 | Agreed performance review meetings setup in calendar for Steady State | 5d | 2021-12-20 | 2021-12-24 | 151FS-5d | 105d | 0d | start no earlier than 2021-11-01 | EXL | 40h |
| 190 | 2.1.7.5.2 | Prepare Lessons Learned document | 5d | 2021-12-20 | 2021-12-24 | 189SS | 105d |  | start no earlier than 2021-12-13 | EXL Transitions | 40h |

| ID | WBS | Task | Duration | Start | Finish | Predecessors | Total slack | Free slack | Constraint | Resources | Work |
| --- | --- | --- | --- | --- | --- | --- | --- | --- | --- | --- | --- |
| 191 | 2.1.7.6 | **Contractual Obligation** | 15d | 2021-12-06 | 2021-12-24 |  | 105d |  |  |  | 240h |
| 192 | 2.1.7.6.1 | Make amendments to SOW, if any | 15d | 2021-12-06 | 2021-12-24 | 168SS | 105d |  | start no earlier than 2021-11-29 | EXL | 120h |
| 193 | 2.1.7.6.2 | Amended SOW signed off | 15d | 2021-12-06 | 2021-12-24 | 168SS | 105d |  |  | EXL / LFG | 120h |
| 194 | 2.1.7.7 | **Conduct Steadt State Go / No-Go Tollgate** | 3d | 2021-12-23 | 2021-12-27 |  | 104d |  |  |  | 24h |
| 195 | 2.1.7.7.1 | Conduct Steady State Go / No-Go (TCoE Review) | 1d | 2021-12-23 | 2021-12-23 |  | 105d | 0d | start no earlier than 2021-12-23 | EXL Transitions | 8h |
| 196 | 2.1.7.7.2 | Conduct Steady State Go / No-Go (Internal and External stakeholders) | 1d | 2021-12-24 | 2021-12-24 | 195 | 105d |  |  | EXL / LFG | 8h |
| 197 | 2.1.7.7.3 | Steady State /BAU | 1d | 2021-12-27 | 2021-12-27 |  | 104d |  | start no earlier than 2021-12-27 | EXL | 8h |
| 198 | 2.1.7.8 | **Execution** | 3d | 2021-12-23 | 2021-12-27 |  | 104d |  |  |  | 32h |
| 199 | 2.1.7.8.1 | Complete Handover to Business | 2d | 2021-12-23 | 2021-12-24 |  | 104d | 0d | start no earlier than 2021-12-23 | EXL Transitions | 16h |
| 200 | 2.1.7.8.2 | Revoke all Accesses for Transitions Team | 1d | 2021-12-27 | 2021-12-27 | 199 | 104d |  |  | EXL | 8h |
| 201 | 2.1.7.8.3 | Archive the project in SMARTrack | 1d | 2021-12-27 | 2021-12-27 |  | 104d |  | start no earlier than 2021-12-27 | EXL Transitions | 8h |
| 202 | 2.2 | **Annuities Operations - Non Financial Inforce Processing** | 205d | 2021-07-19 | 2022-04-29 |  | 15d |  |  |  | 7128h |
| 203 | 2.2.1 | **Hiring & Onboarding** | 51d | 2021-07-19 | 2021-09-27 |  | 169d |  |  |  | 864h |
| 204 | 2.2.1.1 | Finalize seeding strategy/hiring requirement | 5d | 2021-07-19 | 2021-07-23 |  | 215d |  | finish no earlier than 2021-07-23 | EXL Transitions / Ops | 40h |
| 205 | 2.2.1.2 | Approval from EXL Operations on finalized resources | 5d | 2021-07-19 | 2021-07-23 |  | 215d |  | finish no earlier than 2021-07-23 | EXL Transitions / Ops | 40h |
| 206 | 2.2.1.3 | Roll out SRF/ IJP to initiate hiring | 1d | 2021-07-29 | 2021-07-29 |  | 211d |  | start no earlier than 2021-07-29 | EXL Transitions / Ops | 8h |
| 207 | 2.2.1.4 | Define back ground checks process | 15d | 2021-07-19 | 2021-08-06 |  | 205d |  | finish no earlier than 2021-08-06 | EXL Transitions / Ops | 120h |
| 208 | 2.2.1.5 | Hire/Seed & Rollout offer to selected candidates | 27d | 2021-07-19 | 2021-08-24 |  | 193d |  | finish no earlier than 2021-08-24 | EXL Transitions / Ops | 216h |
| 209 | 2.2.1.6 | Hire/Seed QCAs and Trainers | 27d | 2021-07-19 | 2021-08-24 |  | 193d |  | finish no earlier than 2021-08-24 | EXL Transitions / Ops | 216h |
| 210 | 2.2.1.7 | Conduct BGC for new hires/obtain BGC for internal seeded | 25d | 2021-08-24 | 2021-09-27 |  | 169d |  | start no earlier than 2021-08-24 | EXL Transitions / Ops | 200h |
| 211 | 2.2.1.8 | Conduct induction and orientation, Initiate employee ID generation | 3d | 2021-08-24 | 2021-08-26 |  | 191d |  | finish no earlier than 2021-08-26 | EXL Training | 24h |
| 212 | 2.2.2 | **Infrastructure Setup** | 32d | 2021-07-19 | 2021-08-31 |  | 188d |  |  |  | 256h |
| 213 | 2.2.2.1 | Confirm seat availability at delivery location/WFH | 10d | 2021-07-19 | 2021-07-30 |  | 188d | 0d | finish no earlier than 2021-07-30 | EXL Ops / IT | 80h |
| 214 | 2.2.2.2 | Raise request on CRE to block seats | 2d | 2021-08-02 | 2021-08-03 | 213 | 188d | 0d |  | EXL Ops / IT | 16h |
| 215 | 2.2.2.3 | Physical seat readiness/Infrastructure setup | 20d | 2021-08-04 | 2021-08-31 | 214 | 188d |  |  | EXL Infra / IT | 160h |

| ID | WBS | Task | Duration | Start | Finish | Predecessors | Total slack | Free slack | Constraint | Resources | Work |
| --- | --- | --- | --- | --- | --- | --- | --- | --- | --- | --- | --- |
| 216 | 2.2.3 | **Technology Setup** | 35d | 2021-07-19 | 2021-09-03 |  | 170d |  |  |  | 280h |
| 217 | 2.2.3.1 | Raise MRS for hardware, if required | 5d | 2021-07-19 | 2021-07-23 |  | 170d | 0d | finish no earlier than 2021-07-23 | EXL Transitions / IT | 40h |
| 218 | 2.2.3.2 | Procurement of hardware, if required | 15d | 2021-07-26 | 2021-08-13 | 217 | 170d | 0d |  | EXL IT | 120h |
| 219 | 2.2.3.3 | Procure, install and test all required hardware | 10d | 2021-08-16 | 2021-08-27 | 218 | 170d | 0d |  | EXL IT | 80h |
| 220 | 2.2.3.4 | Confirm connectivity/accesses - UAT | 5d | 2021-08-30 | 2021-09-03 | 219 | 170d | 20d |  | EXL Transitions / Ops / IT | 40h |
| 221 | 2.2.4 | **Lincoln System/Access setup** | 30d | 2021-08-23 | 2021-10-01 |  | 165d |  |  |  | 240h |
| 222 | 2.2.4.1 | Mapping of Lincoln system accesses required | 20d | 2021-08-23 | 2021-09-17 |  | 165d | 0d | start no earlier than 2021-08-23 | EXL Transitions / Ops / IT | 160h |
| 223 | 2.2.4.2 | Finalization of accesses required for selected EXL resources | 2d | 2021-09-20 | 2021-09-21 | 222 | 165d | 0d |  | EXL Transitions / Ops / IT | 16h |
| 224 | 2.2.4.3 | Send a list of requisites to LFG | 1d | 2021-09-22 | 2021-09-22 | 223 | 165d | 0d |  | EXL Transitions / Ops / IT | 8h |
| 225 | 2.2.4.4 | LFG to provide required accesses and confirm | 5d | 2021-09-23 | 2021-09-29 | 224 | 165d | 0d |  | LFG | 40h |
| 226 | 2.2.4.5 | EXL to validate accesses and confirm | 2d | 2021-09-30 | 2021-10-01 | 225 | 165d |  |  | EXL Transitions / Ops / IT | 16h |
| 227 | 2.2.5 | **Knowledge Transfer and Documentation** | 40d | 2021-08-30 | 2021-10-22 |  | 150d |  |  |  | 912h |
| 228 | 2.2.5.1 | **Planning** | 25d | 2021-08-30 | 2021-10-01 |  | 165d |  |  |  | 280h |
| 229 | 2.2.5.1.1 | Conduct Preprocess training, if applicable | 10d | 2021-08-30 | 2021-09-10 |  | 180d |  | start no earlier than 2021-08-30 | EXL Training | 80h |
| 230 | 2.2.5.1.2 | Determine KT strategy and Trainer details | 15d | 2021-08-30 | 2021-09-17 |  | 165d | 0d | start no earlier than 2021-08-30 | EXL Transitions | 120h |
| 231 | 2.2.5.1.3 | Obtain training plan/schedule from LFG | 5d | 2021-09-20 | 2021-09-24 | 230 | 165d | 0d |  | EXL Transitions | 40h |
| 232 | 2.2.5.1.4 | Share Trainees details with LFG | 3d | 2021-09-27 | 2021-09-29 | 231 | 165d | 0d |  | EXL Transitions / Ops | 24h |
| 233 | 2.2.5.1.5 | LFG trainer to setup meeting with trainees for remote training | 2d | 2021-09-30 | 2021-10-01 | 232 | 165d |  |  | LFG | 16h |
| 234 | 2.2.5.2 | **Conduct Process Training Go / No-Go Tollgate** | 2d | 2021-09-30 | 2021-10-01 |  | 165d |  |  |  | 16h |
| 235 | 2.2.5.2.1 | Conduct Process Training Go / No-Go (TCoE Review) | 1d | 2021-09-30 | 2021-09-30 |  | 166d |  | start no earlier than 2021-09-30 | EXL TCOE | 8h |
| 236 | 2.2.5.2.2 | Conduct Process Training Go / No-Go (Internal and External stakeholders) | 1d | 2021-10-01 | 2021-10-01 |  | 165d |  | start no earlier than 2021-10-01 | EXL / LFG | 8h |
| 237 | 2.2.5.3 | **Process Training** | 15d | 2021-10-04 | 2021-10-22 |  | 150d |  |  |  | 616h |
| 238 | 2.2.5.3.1 | Conduct training as per the approved plan | 15d | 2021-10-04 | 2021-10-22 | 220 | 150d | 0d | start no earlier than 2021-10-04 | LFG Trainers | 120h |
| 239 | 2.2.5.3.2 | Conduct periodic assessment and quizzes | 15d | 2021-10-04 | 2021-10-22 | 238SS | 150d |  | start no earlier than 2021-10-04 | LFG Trainers | 120h |
| 240 | 2.2.5.3.3 | Calibrate and monitor KT effectiveness with LFG | 15d | 2021-10-04 | 2021-10-22 | 238SS | 150d |  | start no earlier than 2021-10-04 | EXL / LFG | 120h |
| 241 | 2.2.5.3.4 | Update process documentation if required | 15d | 2021-10-04 | 2021-10-22 | 238SS | 150d |  | start no earlier than 2021-10-04 | EXL / LFG | 120h |
| 242 | 2.2.5.3.5 | Provide sufficient practice on ‘Live’ cases before certification | 15d | 2021-10-04 | 2021-10-22 | 238SS | 150d |  | start no earlier than 2021-10-04 | LFG Trainers | 120h |
| 243 | 2.2.5.3.6 | Conduct final assessments and Certification | 1d | 2021-10-22 | 2021-10-22 |  | 150d |  | start no earlier than 2021-10-22 | LFG Trainers | 8h |
| 244 | 2.2.5.3.7 | Go-live readiness Assessment | 1d | 2021-10-22 | 2021-10-22 |  | 150d |  | start no earlier than 2021-10-22 | LFG Trainers | 8h |

| ID | WBS | Task | Duration | Start | Finish | Predecessors | Total slack | Free slack | Constraint | Resources | Work |
| --- | --- | --- | --- | --- | --- | --- | --- | --- | --- | --- | --- |
| 245 | 2.2.6 | **Ramp** | 35d | 2021-10-18 | 2021-12-03 |  | 120d |  |  |  | 2000h |
| 246 | 2.2.6.1 | **Conduct Ramp Go / No-Go Tollgate** | 31d | 2021-10-22 | 2021-12-03 |  | 120d |  |  |  | 280h |
| 247 | 2.2.6.1.1 | Conduct Ramp Go / No-Go (TCoE Review) | 2d | 2021-10-22 | 2021-10-25 |  | 149d |  | start no earlier than 2021-10-22 | EXL Transitions | 16h |
| 248 | 2.2.6.1.2 | Conduct Ramp Go / No-Go (Internal and External stakeholders) | 2d | 2021-10-22 | 2021-10-25 |  | 149d |  | start no earlier than 2021-10-22 | EXL / LFG | 16h |
| 249 | 2.2.6.1.3 | Go Live/Parallel Run | 1d | 2021-10-25 | 2021-10-25 |  | 149d |  | start no earlier than 2021-10-25 | EXL / LFG | 8h |
| 250 | 2.2.6.1.4 | Execute volume ramp as per plan | 30d | 2021-10-25 | 2021-12-03 |  | 120d | 0d | start no earlier than 2021-10-25 | EXL / LFG | 240h |
| 251 | 2.2.6.2 | **KT & Process Management** | 35d | 2021-10-18 | 2021-12-03 |  | 120d |  |  |  | 280h |
| 252 | 2.2.6.2.1 | Creation of P4P structure to be implemented from Ramp | 5d | 2021-10-18 | 2021-10-22 |  | 150d |  | start no earlier than 2021-10-18 | EXL Ops | 40h |
| 253 | 2.2.6.2.2 | Identify QA strategy | 10d | 2021-11-22 | 2021-12-03 | 250FS-10d | 120d | 0d | start no earlier than 2021-10-18 | LFG | 80h |
| 254 | 2.2.6.2.3 | Identify QA resource and certification criteria | 10d | 2021-11-22 | 2021-12-03 | 253SS | 120d |  | start no earlier than 2021-10-18 | EXL / LFG | 80h |
| 255 | 2.2.6.2.4 | Agree on Ramp Success Criteria | 10d | 2021-11-22 | 2021-12-03 | 253SS | 120d |  | start no earlier than 2021-10-18 | EXL / LFG | 80h |
| 256 | 2.2.6.3 | **Project Governance** | 30d | 2021-10-25 | 2021-12-03 |  | 120d |  |  |  | 480h |
| 257 | 2.2.6.3.1 | Weekly / Monthly Ramp performance review meetings setup | 30d | 2021-10-25 | 2021-12-03 | 250SS | 120d |  | start no earlier than 2021-10-25 | EXL Transitions | 240h |
| 258 | 2.2.6.3.2 | Raid Log updation | 30d | 2021-10-25 | 2021-12-03 | 250SS | 120d |  | start no earlier than 2021-10-25 | EXL Transitions | 240h |
| 259 | 2.2.6.4 | **Performance Reporting** | 30d | 2021-10-25 | 2021-12-03 |  | 120d |  |  |  | 960h |
| 260 | 2.2.6.4.1 | Monitor Ramp performance | 30d | 2021-10-25 | 2021-12-03 | 250SS | 120d |  | start no earlier than 2021-10-25 | EXL Transitions / Ops | 240h |
| 261 | 2.2.6.4.2 | Report Ramp performance | 30d | 2021-10-25 | 2021-12-03 | 250SS | 120d |  | start no earlier than 2021-10-25 | EXL Transitions / Ops | 240h |
| 262 | 2.2.6.4.3 | Conduct Ramp Performance Review meetings | 30d | 2021-10-25 | 2021-12-03 | 250SS | 120d |  | start no earlier than 2021-10-25 | EXL Transitions | 240h |
| 263 | 2.2.6.4.4 | Follow Quality audit plan for Ramp | 30d | 2021-10-25 | 2021-12-03 | 250SS | 120d |  | start no earlier than 2021-10-25 | LFG | 240h |
| 264 | 2.2.6.4.5 | Conduct Quality calibration, Variance and feedback reports | 30d | 2021-10-25 | 2021-12-03 | 250SS | 120d |  | start no earlier than 2021-10-25 |  |  |
| 265 | 2.2.7 | **Steady State** | 120d | 2021-11-15 | 2022-04-29 |  | 15d |  |  |  | 2576h |
| 266 | 2.2.7.1 | **Refine Hiring & Seeding Strategy** | 20d | 2021-11-15 | 2021-12-10 |  | 115d |  |  |  | 280h |
| 267 | 2.2.7.1.1 | Refine Seeding/Hiring strategy, if required & update JD | 15d | 2021-11-15 | 2021-12-03 | 250FS-15d | 120d | 0d | start no earlier than 2021-11-15 | EXL Transitions / Ops | 120h |
| 268 | 2.2.7.1.2 | Update Org chart, as required | 15d | 2021-11-15 | 2021-12-03 | 267SS | 120d |  | start no earlier than 2021-11-08 | EXL Ops | 120h |
| 269 | 2.2.7.1.3 | Share and obtain sign off from LFG on revisions in approach | 5d | 2021-12-06 | 2021-12-10 |  | 115d |  | start no earlier than 2021-12-06 | EXL Transitions / Ops | 40h |

| ID | WBS | Task | Duration | Start | Finish | Predecessors | Total slack | Free slack | Constraint | Resources | Work |
| --- | --- | --- | --- | --- | --- | --- | --- | --- | --- | --- | --- |
| 270 | 2.2.7.2 | **Refine Refine KT Strategy** | 15d | 2021-11-15 | 2021-12-03 |  | 120d |  |  |  | 720h |
| 271 | 2.2.7.2.1 | Revalidate training approach & modify, as required | 15d | 2021-11-15 | 2021-12-03 | 267SS | 120d |  | start no earlier than 2021-11-01 | EXL | 120h |
| 272 | 2.2.7.2.2 | Create / modify training plan | 15d | 2021-11-15 | 2021-12-03 | 267SS | 120d |  | finish no earlier than 2021-11-26 | EXL | 120h |
| 273 | 2.2.7.2.3 | Create / modify curriculum | 15d | 2021-11-15 | 2021-12-03 | 267SS | 120d |  | finish no earlier than 2021-11-26 | EXL | 120h |
| 274 | 2.2.7.2.4 | Create / modify Training manual and DTP | 15d | 2021-11-15 | 2021-12-03 | 267SS | 120d |  | finish no earlier than 2021-11-26 | EXL / LFG | 120h |
| 275 | 2.2.7.2.5 | Create/ modify assessment criterion | 15d | 2021-11-15 | 2021-12-03 | 267SS | 120d |  | finish no earlier than 2021-11-26 | EXL / LFG | 120h |
| 276 | 2.2.7.2.6 | Share the new strategy with client | 15d | 2021-11-15 | 2021-12-03 | 267SS | 120d |  |  | EXL | 120h |
| 277 | 2.2.7.3 | **Process Management & Documentation** | 15d | 2021-11-15 | 2021-12-03 |  | 120d |  |  |  | 240h |
| 278 | 2.2.7.3.1 | Creation of FMEA and shared with stakeholders | 15d | 2021-11-15 | 2021-12-03 | 267SS | 120d |  | start no earlier than 2021-11-15 | EXL Quality | 120h |
| 279 | 2.2.7.3.2 | Coordinate with Compliance to create OSD | 15d | 2021-11-15 | 2021-12-03 | 267SS | 120d |  | start no earlier than 2021-11-15 | EXL Transitions | 120h |
| 280 | 2.2.7.4 | **SLA Performance & Gap Analysis** | 105d | 2021-12-06 | 2022-04-29 |  | 15d |  |  |  | 960h |
| 281 | 2.2.7.4.1 | Evaluate pilot performance | 5d | 2021-12-06 | 2021-12-10 |  | 15d | 0d | start no earlier than 2021-12-06 | EXL / LFG | 40h |
| 282 | 2.2.7.4.2 | Identify the gap between historical and current performance | 5d | 2021-12-06 | 2021-12-10 | 281SS | 115d |  | start no earlier than 2021-12-06 | EXL / LFG | 40h |
| 283 | 2.2.7.4.3 | Determine bottlenecks | 5d | 2021-12-06 | 2021-12-10 | 281SS | 15d | 0d | start no earlier than 2021-12-06 | EXL / LFG | 40h |
| 284 | 2.2.7.4.4 | Validate SLA sustainability at BAU | 90d | 2021-12-13 | 2022-04-15 | 283 | 15d | 0d | finish no earlier than 2021-12-10 | EXL / LFG | 720h |
| 285 | 2.2.7.4.5 | Initiate changes (if any) through change control | 10d | 2022-04-18 | 2022-04-29 | 284 | 15d |  |  | EXL | 80h |
| 286 | 2.2.7.4.6 | Create structure for data baseline | 5d | 2021-12-06 | 2021-12-10 | 281SS | 115d |  | start no earlier than 2021-12-06 | EXL / LFG | 40h |
| 287 | 2.2.7.5 | **Project Governance** | 5d | 2021-11-29 | 2021-12-03 |  | 120d |  |  |  | 80h |
| 288 | 2.2.7.5.1 | Agreed performance review meetings setup in calendar for Steady State | 5d | 2021-11-29 | 2021-12-03 | 250FS-5d | 120d | 0d | start no earlier than 2021-11-01 | EXL | 40h |
| 289 | 2.2.7.5.2 | Prepare Lessons Learned document | 5d | 2021-11-29 | 2021-12-03 | 288SS | 120d |  | start no earlier than 2021-11-29 | EXL Transitions | 40h |
| 290 | 2.2.7.6 | **Contractual Obligation** | 15d | 2021-11-15 | 2021-12-03 |  | 120d |  |  |  | 240h |
| 291 | 2.2.7.6.1 | Make amendments to SOW, if any | 15d | 2021-11-15 | 2021-12-03 | 267SS | 120d |  | start no earlier than 2021-11-15 | EXL | 120h |
| 292 | 2.2.7.6.2 | Amended SOW signed off | 15d | 2021-11-15 | 2021-12-03 | 267SS | 120d |  |  | EXL / LFG | 120h |
| 293 | 2.2.7.7 | **Conduct Steadt State Go / No-Go Tollgate** | 3d | 2021-12-02 | 2021-12-06 |  | 119d |  |  |  | 24h |
| 294 | 2.2.7.7.1 | Conduct Steady State Go / No-Go (TCoE Review) | 1d | 2021-12-02 | 2021-12-02 |  | 120d | 0d | start no earlier than 2021-12-02 | EXL Transitions | 8h |
| 295 | 2.2.7.7.2 | Conduct Steady State Go / No-Go (Internal and External stakeholders) | 1d | 2021-12-03 | 2021-12-03 | 294 | 120d |  |  | EXL / LFG | 8h |
| 296 | 2.2.7.7.3 | Steady State /BAU | 1d | 2021-12-06 | 2021-12-06 |  | 119d |  | start no earlier than 2021-12-06 | EXL | 8h |

| ID | WBS | Task | Duration | Start | Finish | Predecessors | Total slack | Free slack | Constraint | Resources | Work |
| --- | --- | --- | --- | --- | --- | --- | --- | --- | --- | --- | --- |
| 297 | 2.2.7.8 | **Execution** | 3d | 2021-12-02 | 2021-12-06 |  | 119d |  |  |  | 32h |
| 298 | 2.2.7.8.1 | Complete Handover to Business | 2d | 2021-12-02 | 2021-12-03 |  | 119d | 0d | start no earlier than 2021-12-02 | EXL Transitions | 16h |
| 299 | 2.2.7.8.2 | Revoke all Accesses for Transitions Team | 1d | 2021-12-06 | 2021-12-06 | 298 | 119d |  |  | EXL | 8h |
| 300 | 2.2.7.8.3 | Archive the project in SMARTrack | 1d | 2021-12-06 | 2021-12-06 |  | 119d |  | start no earlier than 2021-12-06 | EXL Transitions | 8h |
| 301 | 2.3 | **Life Operations - Non Financial Inforce Processing** | 195d | 2021-07-19 | 2022-04-15 |  | 25d |  |  |  | 6568h |
| 302 | 2.3.1 | **Hiring & Onboarding** | 51d | 2021-07-19 | 2021-09-27 |  | 169d |  |  |  | 864h |
| 303 | 2.3.1.1 | Finalize seeding strategy/hiring requirement | 5d | 2021-07-19 | 2021-07-23 |  | 215d |  | finish no earlier than 2021-07-23 | EXL Transitions / Ops | 40h |
| 304 | 2.3.1.2 | Approval from EXL Operations on finalized resources | 5d | 2021-07-19 | 2021-07-23 |  | 215d |  | finish no earlier than 2021-07-23 | EXL Transitions / Ops | 40h |
| 305 | 2.3.1.3 | Roll out SRF/ IJP to initiate hiring | 1d | 2021-07-29 | 2021-07-29 |  | 211d |  | start no earlier than 2021-07-29 | EXL Transitions / Ops | 8h |
| 306 | 2.3.1.4 | Define back ground checks process | 15d | 2021-07-19 | 2021-08-06 |  | 205d |  | finish no earlier than 2021-08-06 | EXL Transitions / Ops | 120h |
| 307 | 2.3.1.5 | Hire/Seed & Rollout offer to selected candidates | 27d | 2021-07-19 | 2021-08-24 |  | 193d |  | finish no earlier than 2021-08-24 | EXL Transitions / Ops | 216h |
| 308 | 2.3.1.6 | Hire/Seed QCAs and Trainers | 27d | 2021-07-19 | 2021-08-24 |  | 193d |  | finish no earlier than 2021-08-24 | EXL Transitions / Ops | 216h |
| 309 | 2.3.1.7 | Conduct BGC for new hires/obtain BGC for internal seeded | 25d | 2021-08-24 | 2021-09-27 |  | 169d |  | start no earlier than 2021-08-24 | EXL Transitions / Ops | 200h |
| 310 | 2.3.1.8 | Conduct induction and orientation, Initiate employee ID generation | 3d | 2021-08-24 | 2021-08-26 |  | 191d |  | finish no earlier than 2021-08-26 | EXL Training | 24h |
| 311 | 2.3.2 | **Infrastructure Setup** | 32d | 2021-07-19 | 2021-08-31 |  | 188d |  |  |  | 256h |
| 312 | 2.3.2.1 | Confirm seat availability at delivery location/WFH | 10d | 2021-07-19 | 2021-07-30 |  | 188d | 0d | finish no earlier than 2021-07-30 | EXL Ops / IT | 80h |
| 313 | 2.3.2.2 | Raise request on CRE to block seats | 2d | 2021-08-02 | 2021-08-03 | 312 | 188d | 0d |  | EXL Ops / IT | 16h |
| 314 | 2.3.2.3 | Physical seat readiness/Infrastructure setup | 20d | 2021-08-04 | 2021-08-31 | 313 | 188d |  |  | EXL Infra / IT | 160h |
| 315 | 2.3.3 | **Technology Setup** | 35d | 2021-07-19 | 2021-09-03 |  | 170d |  |  |  | 280h |
| 316 | 2.3.3.1 | Raise MRS for hardware, if required | 5d | 2021-07-19 | 2021-07-23 |  | 170d | 0d | finish no earlier than 2021-07-23 | EXL Transitions / IT | 40h |
| 317 | 2.3.3.2 | Procurement of hardware, if required | 15d | 2021-07-26 | 2021-08-13 | 316 | 170d | 0d |  | EXL IT | 120h |
| 318 | 2.3.3.3 | Procure, install and test all required hardware | 10d | 2021-08-16 | 2021-08-27 | 317 | 170d | 0d |  | EXL IT | 80h |
| 319 | 2.3.3.4 | Confirm connectivity/accesses - UAT | 5d | 2021-08-30 | 2021-09-03 | 318 | 170d | 20d |  | EXL Transitions / Ops / IT | 40h |
| 320 | 2.3.4 | **Lincoln System/Access setup** | 30d | 2021-08-23 | 2021-10-01 |  | 165d |  |  |  | 240h |
| 321 | 2.3.4.1 | Mapping of Lincoln system accesses required | 20d | 2021-08-23 | 2021-09-17 |  | 165d | 0d | start no earlier than 2021-08-23 | EXL Transitions / Ops / IT | 160h |
| 322 | 2.3.4.2 | Finalization of accesses required for selected EXL resources | 2d | 2021-09-20 | 2021-09-21 | 321 | 165d | 0d |  | EXL Transitions / Ops / IT | 16h |
| 323 | 2.3.4.3 | Send a list of requisites to LFG | 1d | 2021-09-22 | 2021-09-22 | 322 | 165d | 0d |  | EXL Transitions / Ops / IT | 8h |
| 324 | 2.3.4.4 | LFG to provide required accesses and confirm | 5d | 2021-09-23 | 2021-09-29 | 323 | 165d | 0d |  | LFG | 40h |
| 325 | 2.3.4.5 | EXL to validate accesses and confirm | 2d | 2021-09-30 | 2021-10-01 | 324 | 165d |  |  | EXL Transitions / Ops / IT | 16h |

| ID | WBS | Task | Duration | Start | Finish | Predecessors | Total slack | Free slack | Constraint | Resources | Work |
| --- | --- | --- | --- | --- | --- | --- | --- | --- | --- | --- | --- |
| 326 | 2.3.5 | **Knowledge Transfer and Documentation** | 45d | 2021-08-30 | 2021-10-29 |  | 145d |  |  |  | 912h |
| 327 | 2.3.5.1 | **Planning** | 25d | 2021-08-30 | 2021-10-01 |  | 165d |  |  |  | 280h |
| 328 | 2.3.5.1.1 | Conduct Preprocess training, if applicable | 10d | 2021-08-30 | 2021-09-10 |  | 180d |  | start no earlier than 2021-08-30 | EXL Training | 80h |
| 329 | 2.3.5.1.2 | Determine KT strategy and Trainer details | 15d | 2021-08-30 | 2021-09-17 |  | 165d | 0d | start no earlier than 2021-08-30 | EXL Transitions | 120h |
| 330 | 2.3.5.1.3 | Obtain training plan/schedule from LFG | 5d | 2021-09-20 | 2021-09-24 | 329 | 165d | 0d |  | EXL Transitions | 40h |
| 331 | 2.3.5.1.4 | Share Trainees details with LFG | 3d | 2021-09-27 | 2021-09-29 | 330 | 165d | 0d |  | EXL Transitions / Ops | 24h |
| 332 | 2.3.5.1.5 | LFG trainer to setup meeting with trainees for remote training | 2d | 2021-09-30 | 2021-10-01 | 331 | 165d |  |  | LFG | 16h |
| 333 | 2.3.5.2 | **Conduct Process Training Go / No-Go Tollgate** | 2d | 2021-09-30 | 2021-10-01 |  | 165d |  |  |  | 16h |
| 334 | 2.3.5.2.1 | Conduct Process Training Go / No-Go (TCoE Review) | 1d | 2021-09-30 | 2021-09-30 |  | 166d |  | start no earlier than 2021-09-30 | EXL TCOE | 8h |
| 335 | 2.3.5.2.2 | Conduct Process Training Go / No-Go (Internal and External stakeholders) | 1d | 2021-10-01 | 2021-10-01 |  | 165d |  | start no earlier than 2021-10-01 | EXL / LFG | 8h |
| 336 | 2.3.5.3 | **Process Training** | 20d | 2021-10-04 | 2021-10-29 |  | 145d |  |  |  | 616h |
| 337 | 2.3.5.3.1 | Conduct training as per the approved plan | 15d | 2021-10-04 | 2021-10-22 | 319 | 150d | 5d | start no earlier than 2021-10-04 | LFG Trainers | 120h |
| 338 | 2.3.5.3.2 | Conduct periodic assessment and quizzes | 15d | 2021-10-11 | 2021-10-29 | 337SS | 145d |  | finish no earlier than 2021-10-29 | LFG Trainers | 120h |
| 339 | 2.3.5.3.3 | Calibrate and monitor KT effectiveness with LFG | 15d | 2021-10-11 | 2021-10-29 | 337SS | 145d |  | finish no earlier than 2021-10-29 | EXL / LFG | 120h |
| 340 | 2.3.5.3.4 | Update process documentation if required | 15d | 2021-10-11 | 2021-10-29 | 337SS | 145d |  | finish no earlier than 2021-10-29 | EXL / LFG | 120h |
| 341 | 2.3.5.3.5 | Provide sufficient practice on ‘Live’ cases before certification | 15d | 2021-10-11 | 2021-10-29 | 337SS | 145d |  | finish no earlier than 2021-10-29 | LFG Trainers | 120h |
| 342 | 2.3.5.3.6 | Conduct final assessments and Certification | 1d | 2021-10-22 | 2021-10-22 | 337SS | 150d |  | start no earlier than 2021-10-22 | LFG Trainers | 8h |
| 343 | 2.3.5.3.7 | Go-live readiness Assessment | 1d | 2021-10-22 | 2021-10-22 | 337SS | 150d |  | start no earlier than 2021-10-22 | LFG Trainers | 8h |
| 344 | 2.3.6 | **Ramp** | 25d | 2021-10-18 | 2021-11-19 |  | 130d |  |  |  | 1440h |
| 345 | 2.3.6.1 | **Conduct Ramp Go / No-Go Tollgate** | 21d | 2021-10-22 | 2021-11-19 |  | 130d |  |  |  | 200h |
| 346 | 2.3.6.1.1 | Conduct Ramp Go / No-Go (TCoE Review) | 2d | 2021-10-22 | 2021-10-25 |  | 149d |  | start no earlier than 2021-10-22 | EXL Transitions | 16h |
| 347 | 2.3.6.1.2 | Conduct Ramp Go / No-Go (Internal and External stakeholders) | 2d | 2021-10-22 | 2021-10-25 |  | 149d |  | start no earlier than 2021-10-22 | EXL / LFG | 16h |
| 348 | 2.3.6.1.3 | Go Live/Parallel Run | 1d | 2021-10-25 | 2021-10-25 |  | 149d |  | start no earlier than 2021-10-25 | EXL / LFG | 8h |
| 349 | 2.3.6.1.4 | Execute volume ramp as per plan | 20d | 2021-10-25 | 2021-11-19 |  | 130d | 0d | start no earlier than 2021-10-25 | EXL / LFG | 160h |

| ID | WBS | Task | Duration | Start | Finish | Predecessors | Total slack | Free slack | Constraint | Resources | Work |
| --- | --- | --- | --- | --- | --- | --- | --- | --- | --- | --- | --- |
| 350 | 2.3.6.2 | **KT & Process Management** | 25d | 2021-10-18 | 2021-11-19 |  | 130d |  |  |  | 280h |
| 351 | 2.3.6.2.1 | Creation of P4P structure to be implemented from Ramp | 5d | 2021-10-18 | 2021-10-22 |  | 150d |  | start no earlier than 2021-10-18 | EXL Ops | 40h |
| 352 | 2.3.6.2.2 | Identify QA strategy | 10d | 2021-11-08 | 2021-11-19 | 349FS-10d | 130d | 0d | start no earlier than 2021-11-01 | LFG | 80h |
| 353 | 2.3.6.2.3 | Identify QA resource and certification criteria | 10d | 2021-11-08 | 2021-11-19 | 352SS | 130d |  | start no earlier than 2021-10-18 | EXL / LFG | 80h |
| 354 | 2.3.6.2.4 | Agree on Ramp Success Criteria | 10d | 2021-11-08 | 2021-11-19 | 352SS | 130d |  | start no earlier than 2021-10-18 | EXL / LFG | 80h |
| 355 | 2.3.6.3 | **Project Governance** | 20d | 2021-10-25 | 2021-11-19 |  | 130d |  |  |  | 320h |
| 356 | 2.3.6.3.1 | Weekly / Monthly Ramp performance review meetings setup | 20d | 2021-10-25 | 2021-11-19 | 349SS | 130d |  | start no earlier than 2021-10-25 | EXL Transitions | 160h |
| 357 | 2.3.6.3.2 | Raid Log updation | 20d | 2021-10-25 | 2021-11-19 | 349SS | 130d |  | start no earlier than 2021-10-25 | EXL Transitions | 160h |
| 358 | 2.3.6.4 | **Performance Reporting** | 20d | 2021-10-25 | 2021-11-19 |  | 130d |  |  |  | 640h |
| 359 | 2.3.6.4.1 | Monitor Ramp performance | 20d | 2021-10-25 | 2021-11-19 | 349SS | 130d |  | start no earlier than 2021-10-25 | EXL Transitions / Ops | 160h |
| 360 | 2.3.6.4.2 | Report Ramp performance | 20d | 2021-10-25 | 2021-11-19 | 349SS | 130d |  | start no earlier than 2021-10-25 | EXL Transitions / Ops | 160h |
| 361 | 2.3.6.4.3 | Conduct Ramp Performance Review meetings | 20d | 2021-10-25 | 2021-11-19 | 349SS | 130d |  | start no earlier than 2021-10-25 | EXL Transitions | 160h |
| 362 | 2.3.6.4.4 | Follow Quality audit plan for Ramp | 20d | 2021-10-25 | 2021-11-19 | 349SS | 130d |  | start no earlier than 2021-10-25 | LFG | 160h |
| 363 | 2.3.6.4.5 | Conduct Quality calibration, Variance and feedback reports | 20d | 2021-10-25 | 2021-11-19 | 349SS | 130d |  | start no earlier than 2021-10-25 |  |  |
| 364 | 2.3.7 | **Steady State** | 120d | 2021-11-01 | 2022-04-15 |  | 25d |  |  |  | 2576h |
| 365 | 2.3.7.1 | **Refine Hiring & Seeding Strategy** | 25d | 2021-11-01 | 2021-12-03 |  | 120d |  |  |  | 280h |
| 366 | 2.3.7.1.1 | Refine Seeding/Hiring strategy, if required & update JD | 15d | 2021-11-01 | 2021-11-19 | 349FS-15d | 130d | 0d | start no earlier than 2021-11-01 | EXL Transitions / Ops | 120h |
| 367 | 2.3.7.1.2 | Update Org chart, as required | 15d | 2021-11-08 | 2021-11-26 | 366SS | 125d |  | start no earlier than 2021-11-08 | EXL Ops | 120h |
| 368 | 2.3.7.1.3 | Share and obtain sign off from LFG on revisions in approach | 5d | 2021-11-29 | 2021-12-03 |  | 120d |  | start no earlier than 2021-11-29 | EXL Transitions / Ops | 40h |
| 369 | 2.3.7.2 | **Refine Refine KT Strategy** | 15d | 2021-11-01 | 2021-11-19 |  | 130d |  |  |  | 720h |
| 370 | 2.3.7.2.1 | Revalidate training approach & modify, as required | 15d | 2021-11-01 | 2021-11-19 | 366SS | 130d |  | start no earlier than 2021-11-01 | EXL | 120h |
| 371 | 2.3.7.2.2 | Create / modify training plan | 15d | 2021-11-01 | 2021-11-19 | 366SS | 130d |  | start no earlier than 2021-11-01 | EXL | 120h |
| 372 | 2.3.7.2.3 | Create / modify curriculum | 15d | 2021-11-01 | 2021-11-19 | 366SS | 130d |  | start no earlier than 2021-11-01 | EXL | 120h |
| 373 | 2.3.7.2.4 | Create / modify Training manual and DTP | 15d | 2021-11-01 | 2021-11-19 | 366SS | 130d |  | start no earlier than 2021-11-01 | EXL / LFG | 120h |
| 374 | 2.3.7.2.5 | Create/ modify assessment criterion | 15d | 2021-11-01 | 2021-11-19 | 366SS | 130d |  | start no earlier than 2021-11-01 | EXL / LFG | 120h |
| 375 | 2.3.7.2.6 | Share the new strategy with client | 15d | 2021-11-01 | 2021-11-19 | 366SS | 130d |  |  | EXL | 120h |

| ID | WBS | Task | Duration | Start | Finish | Predecessors | Total slack | Free slack | Constraint | Resources | Work |
| --- | --- | --- | --- | --- | --- | --- | --- | --- | --- | --- | --- |
| 376 | 2.3.7.3 | **Process Management & Documentation** | 15d | 2021-11-01 | 2021-11-19 |  | 130d |  |  |  | 240h |
| 377 | 2.3.7.3.1 | Creation of FMEA and shared with stakeholders | 15d | 2021-11-01 | 2021-11-19 | 366SS | 130d |  | start no earlier than 2021-11-01 | EXL Quality | 120h |
| 378 | 2.3.7.3.2 | Coordinate with Compliance to create OSD | 15d | 2021-11-01 | 2021-11-19 | 366SS | 130d |  | start no earlier than 2021-11-01 | EXL Transitions | 120h |
| 379 | 2.3.7.4 | **SLA Performance & Gap Analysis** | 105d | 2021-11-22 | 2022-04-15 |  | 25d |  |  |  | 960h |
| 380 | 2.3.7.4.1 | Evaluate pilot performance | 5d | 2021-11-22 | 2021-11-26 |  | 25d | 0d | start no earlier than 2021-11-22 | EXL / LFG | 40h |
| 381 | 2.3.7.4.2 | Identify the gap between historical and current performance | 5d | 2021-11-22 | 2021-11-26 | 380SS | 125d |  | start no earlier than 2021-11-22 | EXL / LFG | 40h |
| 382 | 2.3.7.4.3 | Determine bottlenecks | 5d | 2021-11-22 | 2021-11-26 | 380SS | 25d | 0d | start no earlier than 2021-11-22 | EXL / LFG | 40h |
| 383 | 2.3.7.4.4 | Validate SLA sustainability at BAU | 90d | 2021-11-29 | 2022-04-01 | 382 | 25d | 0d | finish no earlier than 2021-12-10 | EXL / LFG | 720h |
| 384 | 2.3.7.4.5 | Initiate changes (if any) through change control | 10d | 2022-04-04 | 2022-04-15 | 383 | 25d |  |  | EXL | 80h |
| 385 | 2.3.7.4.6 | Create structure for data baseline | 5d | 2021-11-22 | 2021-11-26 | 380SS | 125d |  | start no earlier than 2021-11-22 | EXL / LFG | 40h |
| 386 | 2.3.7.5 | **Project Governance** | 5d | 2021-11-15 | 2021-11-19 |  | 130d |  |  |  | 80h |
| 387 | 2.3.7.5.1 | Agreed performance review meetings setup in calendar for Steady State | 5d | 2021-11-15 | 2021-11-19 | 349FS-5d | 130d | 0d | start no earlier than 2021-11-01 | EXL | 40h |
| 388 | 2.3.7.5.2 | Prepare Lessons Learned document | 5d | 2021-11-15 | 2021-11-19 | 387SS | 130d |  | start no earlier than 2021-11-15 | EXL Transitions | 40h |
| 389 | 2.3.7.6 | **Contractual Obligation** | 15d | 2021-11-01 | 2021-11-19 |  | 130d |  |  |  | 240h |
| 390 | 2.3.7.6.1 | Make amendments to SOW, if any | 15d | 2021-11-01 | 2021-11-19 | 366SS | 130d |  | start no earlier than 2021-11-01 | EXL | 120h |
| 391 | 2.3.7.6.2 | Amended SOW signed off | 15d | 2021-11-01 | 2021-11-19 | 366SS | 130d |  |  | EXL / LFG | 120h |
| 392 | 2.3.7.7 | **Conduct Steadt State Go / No-Go Tollgate** | 3d | 2021-11-18 | 2021-11-22 |  | 129d |  |  |  | 24h |
| 393 | 2.3.7.7.1 | Conduct Steady State Go / No-Go (TCoE Review) | 1d | 2021-11-18 | 2021-11-18 |  | 129d | 0d | start no earlier than 2021-11-18 | EXL Transitions | 8h |
| 394 | 2.3.7.7.2 | Conduct Steady State Go / No-Go (Internal and External stakeholders) | 1d | 2021-11-19 | 2021-11-19 | 393 | 129d | 0d |  | EXL / LFG | 8h |
| 395 | 2.3.7.7.3 | Steady State /BAU | 1d | 2021-11-22 | 2021-11-22 | 394 | 129d |  |  | EXL | 8h |
| 396 | 2.3.7.8 | **Execution** | 3d | 2021-11-18 | 2021-11-22 |  | 129d |  |  |  | 32h |
| 397 | 2.3.7.8.1 | Complete Handover to Business | 2d | 2021-11-18 | 2021-11-19 |  | 129d | 0d | start no earlier than 2021-11-18 | EXL Transitions | 16h |
| 398 | 2.3.7.8.2 | Revoke all Accesses for Transitions Team | 1d | 2021-11-22 | 2021-11-22 | 397 | 129d |  |  | EXL | 8h |
| 399 | 2.3.7.8.3 | Archive the project in SMARTrack | 1d | 2021-11-22 | 2021-11-22 |  | 129d |  | start no earlier than 2021-11-22 | EXL Transitions | 8h |

| ID | WBS | Task | Duration | Start | Finish | Predecessors | Total slack | Free slack | Constraint | Resources | Work |
| --- | --- | --- | --- | --- | --- | --- | --- | --- | --- | --- | --- |
| 400 | 2.4 | **Life Operations - Secondary Address and Return Mail** | 195d | 2021-07-19 | 2022-04-15 |  | 25d |  |  |  | 6568h |
| 401 | 2.4.1 | **Hiring & Onboarding** | 51d | 2021-07-19 | 2021-09-27 |  | 169d |  |  |  | 864h |
| 402 | 2.4.1.1 | Finalize seeding strategy/hiring requirement | 5d | 2021-07-19 | 2021-07-23 |  | 215d |  | finish no earlier than 2021-07-23 | EXL Transitions / Ops | 40h |
| 403 | 2.4.1.2 | Approval from EXL Operations on finalized resources | 5d | 2021-07-19 | 2021-07-23 |  | 215d |  | finish no earlier than 2021-07-23 | EXL Transitions / Ops | 40h |
| 404 | 2.4.1.3 | Roll out SRF/ IJP to initiate hiring | 1d | 2021-07-29 | 2021-07-29 |  | 211d |  | start no earlier than 2021-07-29 | EXL Transitions / Ops | 8h |
| 405 | 2.4.1.4 | Define back ground checks process | 15d | 2021-07-19 | 2021-08-06 |  | 205d |  | finish no earlier than 2021-08-06 | EXL Transitions / Ops | 120h |
| 406 | 2.4.1.5 | Hire/Seed & Rollout offer to selected candidates | 27d | 2021-07-19 | 2021-08-24 |  | 193d |  | finish no earlier than 2021-08-24 | EXL Transitions / Ops | 216h |
| 407 | 2.4.1.6 | Hire/Seed QCAs and Trainers | 27d | 2021-07-19 | 2021-08-24 |  | 193d |  | finish no earlier than 2021-08-24 | EXL Transitions / Ops | 216h |
| 408 | 2.4.1.7 | Conduct BGC for new hires/obtain BGC for internal seeded | 25d | 2021-08-24 | 2021-09-27 |  | 169d |  | start no earlier than 2021-08-24 | EXL Transitions / Ops | 200h |
| 409 | 2.4.1.8 | Conduct induction and orientation, Initiate employee ID generation | 3d | 2021-08-24 | 2021-08-26 |  | 191d |  | finish no earlier than 2021-08-26 | EXL Training | 24h |
| 410 | 2.4.2 | **Infrastructure Setup** | 32d | 2021-07-19 | 2021-08-31 |  | 188d |  |  |  | 256h |
| 411 | 2.4.2.1 | Confirm seat availability at delivery location/WFH | 10d | 2021-07-19 | 2021-07-30 |  | 188d | 0d | finish no earlier than 2021-07-30 | EXL Ops / IT | 80h |
| 412 | 2.4.2.2 | Raise request on CRE to block seats | 2d | 2021-08-02 | 2021-08-03 | 411 | 188d | 0d |  | EXL Ops / IT | 16h |
| 413 | 2.4.2.3 | Physical seat readiness/Infrastructure setup | 20d | 2021-08-04 | 2021-08-31 | 412 | 188d |  |  | EXL Infra / IT | 160h |
| 414 | 2.4.3 | **Technology Setup** | 35d | 2021-07-19 | 2021-09-03 |  | 170d |  |  |  | 280h |
| 415 | 2.4.3.1 | Raise MRS for hardware, if required | 5d | 2021-07-19 | 2021-07-23 |  | 170d | 0d | finish no earlier than 2021-07-23 | EXL Transitions / IT | 40h |
| 416 | 2.4.3.2 | Procurement of hardware, if required | 15d | 2021-07-26 | 2021-08-13 | 415 | 170d | 0d |  | EXL IT | 120h |
| 417 | 2.4.3.3 | Procure, install and test all required hardware | 10d | 2021-08-16 | 2021-08-27 | 416 | 170d | 0d |  | EXL IT | 80h |
| 418 | 2.4.3.4 | Confirm connectivity/accesses - UAT | 5d | 2021-08-30 | 2021-09-03 | 417 | 170d | 20d |  | EXL Transitions / Ops / IT | 40h |
| 419 | 2.4.4 | **Lincoln System/Access setup** | 30d | 2021-08-23 | 2021-10-01 |  | 165d |  |  |  | 240h |
| 420 | 2.4.4.1 | Mapping of Lincoln system accesses required | 20d | 2021-08-23 | 2021-09-17 |  | 165d | 0d | start no earlier than 2021-08-23 | EXL Transitions / Ops / IT | 160h |
| 421 | 2.4.4.2 | Finalization of accesses required for selected EXL resources | 2d | 2021-09-20 | 2021-09-21 | 420 | 165d | 0d |  | EXL Transitions / Ops / IT | 16h |
| 422 | 2.4.4.3 | Send a list of requisites to LFG | 1d | 2021-09-22 | 2021-09-22 | 421 | 165d | 0d |  | EXL Transitions / Ops / IT | 8h |
| 423 | 2.4.4.4 | LFG to provide required accesses and confirm | 5d | 2021-09-23 | 2021-09-29 | 422 | 165d | 0d |  | LFG | 40h |
| 424 | 2.4.4.5 | EXL to validate accesses and confirm | 2d | 2021-09-30 | 2021-10-01 | 423 | 165d |  |  | EXL Transitions / Ops / IT | 16h |

| ID | WBS | Task | Duration | Start | Finish | Predecessors | Total slack | Free slack | Constraint | Resources | Work |
| --- | --- | --- | --- | --- | --- | --- | --- | --- | --- | --- | --- |
| 425 | 2.4.5 | **Knowledge Transfer and Documentation** | 45d | 2021-08-30 | 2021-10-29 |  | 145d |  |  |  | 912h |
| 426 | 2.4.5.1 | **Planning** | 25d | 2021-08-30 | 2021-10-01 |  | 165d |  |  |  | 280h |
| 427 | 2.4.5.1.1 | Conduct Preprocess training, if applicable | 10d | 2021-08-30 | 2021-09-10 |  | 180d |  | start no earlier than 2021-08-30 | EXL Training | 80h |
| 428 | 2.4.5.1.2 | Determine KT strategy and Trainer details | 15d | 2021-08-30 | 2021-09-17 |  | 165d | 0d | start no earlier than 2021-08-30 | EXL Transitions | 120h |
| 429 | 2.4.5.1.3 | Obtain training plan/schedule from LFG | 5d | 2021-09-20 | 2021-09-24 | 428 | 165d | 0d |  | EXL Transitions | 40h |
| 430 | 2.4.5.1.4 | Share Trainees details with LFG | 3d | 2021-09-27 | 2021-09-29 | 429 | 165d | 0d |  | EXL Transitions / Ops | 24h |
| 431 | 2.4.5.1.5 | LFG trainer to setup meeting with trainees for remote training | 2d | 2021-09-30 | 2021-10-01 | 430 | 165d |  |  | LFG | 16h |
| 432 | 2.4.5.2 | **Conduct Process Training Go / No-Go Tollgate** | 2d | 2021-09-30 | 2021-10-01 |  | 165d |  |  |  | 16h |
| 433 | 2.4.5.2.1 | Conduct Process Training Go / No-Go (TCoE Review) | 1d | 2021-09-30 | 2021-09-30 |  | 166d |  | start no earlier than 2021-09-30 | EXL TCOE | 8h |
| 434 | 2.4.5.2.2 | Conduct Process Training Go / No-Go (Internal and External stakeholders) | 1d | 2021-10-01 | 2021-10-01 |  | 165d |  | start no earlier than 2021-10-01 | EXL / LFG | 8h |
| 435 | 2.4.5.3 | **Process Training** | 20d | 2021-10-04 | 2021-10-29 |  | 145d |  |  |  | 616h |
| 436 | 2.4.5.3.1 | Conduct training as per the approved plan | 15d | 2021-10-04 | 2021-10-22 | 418 | 150d | 5d | start no earlier than 2021-10-04 | LFG Trainers | 120h |
| 437 | 2.4.5.3.2 | Conduct periodic assessment and quizzes | 15d | 2021-10-11 | 2021-10-29 | 436SS | 145d |  | finish no earlier than 2021-10-29 | LFG Trainers | 120h |
| 438 | 2.4.5.3.3 | Calibrate and monitor KT effectiveness with LFG | 15d | 2021-10-11 | 2021-10-29 | 436SS | 145d |  | finish no earlier than 2021-10-29 | EXL / LFG | 120h |
| 439 | 2.4.5.3.4 | Update process documentation if required | 15d | 2021-10-11 | 2021-10-29 | 436SS | 145d |  | finish no earlier than 2021-10-29 | EXL / LFG | 120h |
| 440 | 2.4.5.3.5 | Provide sufficient practice on ‘Live’ cases before certification | 15d | 2021-10-11 | 2021-10-29 | 436SS | 145d |  | finish no earlier than 2021-10-29 | LFG Trainers | 120h |
| 441 | 2.4.5.3.6 | Conduct final assessments and Certification | 1d | 2021-10-22 | 2021-10-22 |  | 150d |  | start no earlier than 2021-10-22 | LFG Trainers | 8h |
| 442 | 2.4.5.3.7 | Go-live readiness Assessment | 1d | 2021-10-22 | 2021-10-22 |  | 150d |  | start no earlier than 2021-10-22 | LFG Trainers | 8h |
| 443 | 2.4.6 | **Ramp** | 25d | 2021-10-18 | 2021-11-19 |  | 130d |  |  |  | 1440h |
| 444 | 2.4.6.1 | **Conduct Ramp Go / No-Go Tollgate** | 21d | 2021-10-22 | 2021-11-19 |  | 130d |  |  |  | 200h |
| 445 | 2.4.6.1.1 | Conduct Ramp Go / No-Go (TCoE Review) | 2d | 2021-10-22 | 2021-10-25 |  | 149d |  | start no earlier than 2021-10-22 | EXL Transitions | 16h |
| 446 | 2.4.6.1.2 | Conduct Ramp Go / No-Go (Internal and External stakeholders) | 2d | 2021-10-22 | 2021-10-25 |  | 149d |  | start no earlier than 2021-10-22 | EXL / LFG | 16h |
| 447 | 2.4.6.1.3 | Go Live/Parallel Run | 1d | 2021-10-25 | 2021-10-25 |  | 149d |  | start no earlier than 2021-10-25 | EXL / LFG | 8h |
| 448 | 2.4.6.1.4 | Execute volume ramp as per plan | 20d | 2021-10-25 | 2021-11-19 |  | 130d | 0d | start no earlier than 2021-10-25 | EXL / LFG | 160h |

| ID | WBS | Task | Duration | Start | Finish | Predecessors | Total slack | Free slack | Constraint | Resources | Work |
| --- | --- | --- | --- | --- | --- | --- | --- | --- | --- | --- | --- |
| 449 | 2.4.6.2 | **KT & Process Management** | 25d | 2021-10-18 | 2021-11-19 |  | 130d |  |  |  | 280h |
| 450 | 2.4.6.2.1 | Creation of P4P structure to be implemented from Ramp | 5d | 2021-10-18 | 2021-10-22 |  | 150d |  | start no earlier than 2021-10-18 | EXL Ops | 40h |
| 451 | 2.4.6.2.2 | Identify QA strategy | 10d | 2021-11-08 | 2021-11-19 | 448FS-10d | 130d | 0d | start no earlier than 2021-11-01 | LFG | 80h |
| 452 | 2.4.6.2.3 | Identify QA resource and certification criteria | 10d | 2021-11-08 | 2021-11-19 | 451SS | 130d |  | start no earlier than 2021-10-18 | EXL / LFG | 80h |
| 453 | 2.4.6.2.4 | Agree on Ramp Success Criteria | 10d | 2021-11-08 | 2021-11-19 | 451SS | 130d |  | start no earlier than 2021-10-18 | EXL / LFG | 80h |
| 454 | 2.4.6.3 | **Project Governance** | 20d | 2021-10-25 | 2021-11-19 |  | 130d |  |  |  | 320h |
| 455 | 2.4.6.3.1 | Weekly / Monthly Ramp performance review meetings setup | 20d | 2021-10-25 | 2021-11-19 | 448SS | 130d |  | start no earlier than 2021-10-25 | EXL Transitions | 160h |
| 456 | 2.4.6.3.2 | Raid Log updation | 20d | 2021-10-25 | 2021-11-19 | 448SS | 130d |  | start no earlier than 2021-10-25 | EXL Transitions | 160h |
| 457 | 2.4.6.4 | **Performance Reporting** | 20d | 2021-10-25 | 2021-11-19 |  | 130d |  |  |  | 640h |
| 458 | 2.4.6.4.1 | Monitor Ramp performance | 20d | 2021-10-25 | 2021-11-19 | 448SS | 130d |  | start no earlier than 2021-10-25 | EXL Transitions / Ops | 160h |
| 459 | 2.4.6.4.2 | Report Ramp performance | 20d | 2021-10-25 | 2021-11-19 | 448SS | 130d |  | start no earlier than 2021-10-25 | EXL Transitions / Ops | 160h |
| 460 | 2.4.6.4.3 | Conduct Ramp Performance Review meetings | 20d | 2021-10-25 | 2021-11-19 | 448SS | 130d |  | start no earlier than 2021-10-25 | EXL Transitions | 160h |
| 461 | 2.4.6.4.4 | Follow Quality audit plan for Ramp | 20d | 2021-10-25 | 2021-11-19 | 448SS | 130d |  | start no earlier than 2021-10-25 | LFG | 160h |
| 462 | 2.4.6.4.5 | Conduct Quality calibration, Variance and feedback reports | 20d | 2021-10-25 | 2021-11-19 | 448SS | 130d |  | start no earlier than 2021-10-25 |  |  |
| 463 | 2.4.7 | **Steady State** | 120d | 2021-11-01 | 2022-04-15 |  | 25d |  |  |  | 2576h |
| 464 | 2.4.7.1 | **Refine Hiring & Seeding Strategy** | 25d | 2021-11-01 | 2021-12-03 |  | 120d |  |  |  | 280h |
| 465 | 2.4.7.1.1 | Refine Seeding/Hiring strategy, if required & update JD | 15d | 2021-11-01 | 2021-11-19 | 448FS-15d | 130d | 0d | start no earlier than 2021-11-01 | EXL Transitions / Ops | 120h |
| 466 | 2.4.7.1.2 | Update Org chart, as required | 15d | 2021-11-08 | 2021-11-26 | 465SS | 125d |  | start no earlier than 2021-11-08 | EXL Ops | 120h |
| 467 | 2.4.7.1.3 | Share and obtain sign off from LFG on revisions in approach | 5d | 2021-11-29 | 2021-12-03 |  | 120d |  | start no earlier than 2021-11-29 | EXL Transitions / Ops | 40h |
| 468 | 2.4.7.2 | **Refine Refine KT Strategy** | 15d | 2021-11-01 | 2021-11-19 |  | 130d |  |  |  | 720h |
| 469 | 2.4.7.2.1 | Revalidate training approach & modify, as required | 15d | 2021-11-01 | 2021-11-19 | 465SS | 130d |  | start no earlier than 2021-11-01 | EXL | 120h |
| 470 | 2.4.7.2.2 | Create / modify training plan | 15d | 2021-11-01 | 2021-11-19 | 465SS | 130d |  | start no earlier than 2021-11-01 | EXL | 120h |
| 471 | 2.4.7.2.3 | Create / modify curriculum | 15d | 2021-11-01 | 2021-11-19 | 465SS | 130d |  | start no earlier than 2021-11-01 | EXL | 120h |
| 472 | 2.4.7.2.4 | Create / modify Training manual and DTP | 15d | 2021-11-01 | 2021-11-19 | 465SS | 130d |  | start no earlier than 2021-11-01 | EXL / LFG | 120h |
| 473 | 2.4.7.2.5 | Create/ modify assessment criterion | 15d | 2021-11-01 | 2021-11-19 | 465SS | 130d |  | start no earlier than 2021-11-01 | EXL / LFG | 120h |
| 474 | 2.4.7.2.6 | Share the new strategy with client | 15d | 2021-11-01 | 2021-11-19 | 465SS | 130d |  |  | EXL | 120h |

| ID | WBS | Task | Duration | Start | Finish | Predecessors | Total slack | Free slack | Constraint | Resources | Work |
| --- | --- | --- | --- | --- | --- | --- | --- | --- | --- | --- | --- |
| 475 | 2.4.7.3 | **Process Management & Documentation** | 15d | 2021-11-01 | 2021-11-19 |  | 130d |  |  |  | 240h |
| 476 | 2.4.7.3.1 | Creation of FMEA and shared with stakeholders | 15d | 2021-11-01 | 2021-11-19 | 465SS | 130d |  | start no earlier than 2021-11-01 | EXL Quality | 120h |
| 477 | 2.4.7.3.2 | Coordinate with Compliance to create OSD | 15d | 2021-11-01 | 2021-11-19 | 465SS | 130d |  | start no earlier than 2021-11-01 | EXL Transitions | 120h |
| 478 | 2.4.7.4 | **SLA Performance & Gap Analysis** | 105d | 2021-11-22 | 2022-04-15 |  | 25d |  |  |  | 960h |
| 479 | 2.4.7.4.1 | Evaluate pilot performance | 5d | 2021-11-22 | 2021-11-26 |  | 25d | 0d | start no earlier than 2021-11-22 | EXL / LFG | 40h |
| 480 | 2.4.7.4.2 | Identify the gap between historical and current performance | 5d | 2021-11-22 | 2021-11-26 | 479SS | 125d |  | start no earlier than 2021-11-22 | EXL / LFG | 40h |
| 481 | 2.4.7.4.3 | Determine bottlenecks | 5d | 2021-11-22 | 2021-11-26 | 479SS | 25d | 0d | start no earlier than 2021-11-22 | EXL / LFG | 40h |
| 482 | 2.4.7.4.4 | Validate SLA sustainability at BAU | 90d | 2021-11-29 | 2022-04-01 | 481 | 25d | 0d | finish no earlier than 2021-12-10 | EXL / LFG | 720h |
| 483 | 2.4.7.4.5 | Initiate changes (if any) through change control | 10d | 2022-04-04 | 2022-04-15 | 482 | 25d |  |  | EXL | 80h |
| 484 | 2.4.7.4.6 | Create structure for data baseline | 5d | 2021-11-22 | 2021-11-26 | 479SS | 125d |  | start no earlier than 2021-11-22 | EXL / LFG | 40h |
| 485 | 2.4.7.5 | **Project Governance** | 5d | 2021-11-15 | 2021-11-19 |  | 130d |  |  |  | 80h |
| 486 | 2.4.7.5.1 | Agreed performance review meetings setup in calendar for Steady State | 5d | 2021-11-15 | 2021-11-19 | 448FS-5d | 130d | 0d | start no earlier than 2021-11-01 | EXL | 40h |
| 487 | 2.4.7.5.2 | Prepare Lessons Learned document | 5d | 2021-11-15 | 2021-11-19 | 486SS | 130d |  | start no earlier than 2021-11-15 | EXL Transitions | 40h |
| 488 | 2.4.7.6 | **Contractual Obligation** | 15d | 2021-11-01 | 2021-11-19 |  | 130d |  |  |  | 240h |
| 489 | 2.4.7.6.1 | Make amendments to SOW, if any | 15d | 2021-11-01 | 2021-11-19 | 465SS | 130d |  | start no earlier than 2021-11-01 | EXL | 120h |
| 490 | 2.4.7.6.2 | Amended SOW signed off | 15d | 2021-11-01 | 2021-11-19 | 465SS | 130d |  |  | EXL / LFG | 120h |
| 491 | 2.4.7.7 | **Conduct Steadt State Go / No-Go Tollgate** | 3d | 2021-11-18 | 2021-11-22 |  | 129d |  |  |  | 24h |
| 492 | 2.4.7.7.1 | Conduct Steady State Go / No-Go (TCoE Review) | 1d | 2021-11-18 | 2021-11-18 |  | 129d | 0d | start no earlier than 2021-11-18 | EXL Transitions | 8h |
| 493 | 2.4.7.7.2 | Conduct Steady State Go / No-Go (Internal and External stakeholders) | 1d | 2021-11-19 | 2021-11-19 | 492 | 129d | 0d |  | EXL / LFG | 8h |
| 494 | 2.4.7.7.3 | Steady State /BAU | 1d | 2021-11-22 | 2021-11-22 | 493 | 129d |  |  | EXL | 8h |
| 495 | 2.4.7.8 | **Execution** | 3d | 2021-11-18 | 2021-11-22 |  | 129d |  |  |  | 32h |
| 496 | 2.4.7.8.1 | Complete Handover to Business | 2d | 2021-11-18 | 2021-11-19 |  | 129d | 0d | start no earlier than 2021-11-18 | EXL Transitions | 16h |
| 497 | 2.4.7.8.2 | Revoke all Accesses for Transitions Team | 1d | 2021-11-22 | 2021-11-22 | 496 | 129d |  |  | EXL | 8h |
| 498 | 2.4.7.8.3 | Archive the project in SMARTrack | 1d | 2021-11-22 | 2021-11-22 |  | 129d |  | start no earlier than 2021-11-22 | EXL Transitions | 8h |
